# 10_081_PDT_CON_P153_E146_Final_Avance

How a schedule from MS Project changed from version to version. A marks actual dates.

## Version 1 (saved 2018-11-29, file 28_382_PDT_CON_P363_E302_28112018.mpp)

Note of the change: Se sube linea base para el nuevo repositorio

| ID | WBS | Task | Duration | Start | Finish | Predecessors | Complete | Total float |
| --- | --- | --- | --- | --- | --- | --- | --- | --- |
| 1 | 1 | **DyP_IPP - Mejoras al Módulo de descargas de acuses del IDE** | 68.5d | 2018-12-10 A | 2019-03-18 |  | 3% | 0d |
| 2 | 1.1 | **Análisis** | 19d | 2018-12-10 A | 2019-01-07 |  | 19% | 49.5d |
| 3 |  | Revisar Información de Insumos | 1d | 2018-12-10 A | 2018-12-10 A |  | 100% |  |
| 4 | 1.1.2 | **Especificación Funcional** | 16d | 2018-12-11 A | 2019-01-03 |  | 16% | 51.5d |
| 5 | 1.1.2.1 | **Documentar la especificación funcional** | 14d | 2018-12-11 A | 2018-12-31 |  | 25% | 0d |
| 6 |  | Elaborar documentos de especificación funcional | 14d | 2018-12-11 A | 2018-12-31 | 3 | 25% | 0d |
| 7 |  | Revisar documentación de la especificación funcional (Analista) | 3d | 2018-12-27 | 2018-12-31 | 6FS-3d |  | 53.5d |
| 8 |  | Revisar documentación de la especificación funcional (Soluciones de Negocio) | 5d | 2018-12-27 | 2019-01-03 | 6FS-3d |  | 0d |
| 9 | 1.1.3 | **Entregables** | 0d | 2019-01-07 | 2019-01-07 | 8FS+2d |  | 0d |
| 10 |  | 28_382_CRN | 0d | 2019-01-07 | 2019-01-07 |  |  | 0d |
| 11 |  | 28_382_CCV | 0d | 2019-01-07 | 2019-01-07 |  |  | 0d |
| 12 |  | 28_382_EIU_IDEWEB | 0d | 2019-01-07 | 2019-01-07 |  |  | 0d |
| 13 |  | 28_382_EZS | 0d | 2019-01-07 | 2019-01-07 |  |  | 0d |
| 14 |  | 28_382_ECU_IDEWEB | 0d | 2019-01-07 | 2019-01-07 |  |  | 0d |
| 15 |  | 28_382_MTB | 0d | 2019-01-07 | 2019-01-07 |  |  | 0d |
| 16 |  | 28_382_MCU | 0d | 2019-01-07 | 2019-01-07 |  |  | 0d |
| 17 |  | 28_382_RDP_IDEWEB | 0d | 2019-01-07 | 2019-01-07 |  |  | 0d |
| 18 |  | Formalizar documentación de la especificación funcional | 0.5d | 2019-01-07 | 2019-01-07 | 9FF |  | 49.5d |
| 19 |  | Especificación funcional formalizada | 0d | 2019-01-07 | 2019-01-07 | 8, 18 |  | 49.5d |
| 20 | 1.2 | **Diseño** | 5d | 2019-01-07 | 2019-01-11 |  |  | 0d |
| 21 | 1.2.1 | **Diseño de Arquitectura Tecnológica** | 5d | 2019-01-07 | 2019-01-11 |  |  | 0d |
| 22 |  | Revisar documentos de la arquitectura de la solución | 1d | 2019-01-07 | 2019-01-07 | 9FS-1d |  | 0d |
| 23 | 1.2.1.2 | **Diseño Aplicativo Detallado (MDAP)** | 4d | 2019-01-08 | 2019-01-11 |  |  | 0d |
| 24 | 1.2.1.2.1 | **Elaborar Documentos de Diseño** | 4d | 2019-01-08 | 2019-01-11 |  |  | 0d |
| 25 |  | Actualizar documentos de diseño | 4d | 2019-01-08 | 2019-01-11 | 22 |  | 0d |
| 26 |  | Revisar documentos de diseño (Analista) | 1d | 2019-01-11 | 2019-01-11 | 24FS-1d |  | 0d |
| 27 |  | Revisar documentación de la arquitectura tecnológica (ACTT) | 1d | 2019-01-11 | 2019-01-11 | 24FS-1d |  | 0d |
| 28 | 1.2.1.3 | **Entregables** | 0d | 2019-01-11 | 2019-01-11 | 27 |  | 0d |
| 29 |  | 28_382_RPP | 0d | 2019-01-11 | 2019-01-11 |  |  | 0d |
| 30 |  | 28_382_VBD | 0d | 2019-01-11 | 2019-01-11 |  |  | 0d |
| 31 |  | 28_382_DIC_IDEWEB | 0d | 2019-01-11 | 2019-01-11 |  |  | 0d |
| 32 |  | 28_382_MLF | 0d | 2019-01-11 | 2019-01-11 |  |  | 0d |
| 33 |  | Formalizar documentación de la arquitectura tecnológica | 1d | 2019-01-11 | 2019-01-11 | 28FF |  | 0d |
| 34 |  | Arquitectura tecnológica formalizada | 0d | 2019-01-11 | 2019-01-11 | 28FF |  | 0d |
| 35 | 1.3 | **Desarrollo** | 15d | 2019-01-14 | 2019-02-01 |  |  | 0d |
| 36 | 1.3.1 | **Desarrollar / parametrizar aplicación** | 10d | 2019-01-14 | 2019-01-25 |  |  | 0d |
| 37 | 1.3.1.1 | **Desarrollar artefactos de desarrollo** | 10d | 2019-01-14 | 2019-01-25 |  |  | 0d |
| 38 |  | Integrar Servicios - (Selladora, Envió Correo, Autentificación, Acceso y Encriptar Archivo) | 10d | 2019-01-14 | 2019-01-25 | 20 |  | 0d |
| 39 |  | Integrar Servicios - (Presentación Internet/Modulo, Recepción, Validación y Carga DWH) | 10d | 2019-01-14 | 2019-01-25 | 20 |  | 0d |
| 40 |  | Integrar Servicios - (Monitor, Monitor Servicios y Monitor DEC_IDE_Tradicional) | 10d | 2019-01-14 | 2019-01-25 | 20 |  | 0d |
| 41 |  | Integrar código y versionamiento | 5d | 2019-01-21 | 2019-01-25 | 37FS-5d |  | 0d |
| 42 |  | Elaborar estrategia, plan y casos prueba | 5d | 2019-01-21 | 2019-01-25 | 37FS-5d |  | 35.5d |
| 43 |  | Realizar pruebas unitarias | 1d | 2019-01-28 | 2019-01-28 | 41 |  | 0d |
| 44 |  | Realizar pruebas calidad de código | 1d | 2019-01-29 | 2019-01-29 | 43 |  | 0d |
| 45 |  | Realizar pruebas funcionales de la aplicación | 3d | 2019-01-30 | 2019-02-01 | 44 |  | 30.5d |
| 46 |  | Realizar pruebas de vulnerabilidad (ambiente desarrollo 50%) | 3d | 2019-01-30 | 2019-02-01 | 44 |  | 0d |
| 47 |  | Generar y entregar paquete aplicativo a la AVL | 1d | 2019-02-01 | 2019-02-01 | 46FS-1d |  | 0d |
| 48 | 1.3.9 | **Entregables** | 0d | 2019-02-01 | 2019-02-01 |  |  | 30.5d |
| 49 |  | Reporte de pruebas unitarias | 0d | 2019-02-01 | 2019-02-01 | 47 |  | 30.5d |
| 50 |  | Reporte de pruebas de calidad de código | 0d | 2019-02-01 | 2019-02-01 | 47 |  | 30.5d |
| 51 |  | Reporte de pruebas de vulnerabilidad (50% desarrollo) | 0d | 2019-02-01 | 2019-02-01 | 47 |  | 30.5d |
| 52 | 1.3.9.4 | **Paquete (s)** | 0d | 2019-02-01 | 2019-02-01 |  |  | 30.5d |
| 53 |  | 28_382_MAC_IDEWEB | 0d | 2019-02-01 | 2019-02-01 | 47 |  | 30.5d |
| 54 |  | 28_382_MAI_IDEWEB | 0d | 2019-02-01 | 2019-02-01 | 47 |  | 30.5d |
| 55 |  | DLCC18481DE1.dp | 0d | 2019-02-01 | 2019-02-01 | 47 |  | 30.5d |
| 56 |  | DLCC18481DE1 | 0d | 2019-02-01 | 2019-02-01 | 47 |  | 30.5d |
| 57 |  | DLCC18481DE1 | 0d | 2019-02-01 | 2019-02-01 | 47 |  | 30.5d |
| 58 | 1.4 | **Pruebas** | 15d | 2019-02-04 | 2019-02-22 |  |  | 0d |
| 59 |  | Ambientación integración y UAT | 0d | 2019-02-04 | 2019-02-04 | 47FS+1d |  | 29.5d |
| 60 |  | Seguridad identidades integración y UAT | 0d | 2019-02-04 | 2019-02-04 | 47FS+1d |  | 29.5d |
| 61 | 1.4.3 | **Pruebas de integración aplicativa** | 5d | 2019-02-04 | 2019-02-08 |  |  | 0d |
| 62 |  | Compilar, armar e instalar solución aplicativa | 1d | 2019-02-04 | 2019-02-04 | 47 |  | 29.5d |
| 63 |  | Acompañamiento a compilar, armar e instalar solución aplicativa | 1d | 2019-02-04 | 2019-02-04 | 47 |  | 0d |
| 64 |  | Aplicación instalada en ambiente de integración | 0d | 2019-02-04 | 2019-02-04 | 62, 63 |  | 29.5d |
| 65 |  | Ejecutar pruebas de integración aplicativa | 2.5d | 2019-02-05 | 2019-02-07 | 63 |  | 0d |
| 66 |  | Realizar pruebas de vulnerabilidad (ambiente integración 75%) | 2.5d | 2019-02-05 | 2019-02-07 | 63 |  | 26.5d |
| 67 |  | Atención a la iniciativa para la solución aplicativa | 2.5d | 2019-02-05 | 2019-02-07 | 66FS-2d |  | 26.5d |
| 68 |  | Reporte de prueba de integración aplicativa | 0d | 2019-02-08 | 2019-02-08 | 65FS+1d |  | 26d |
| 69 |  | Actualizar paquete aplicativo a la AVL | 0.5d | 2019-02-08 | 2019-02-08 | 65FS+1d |  | 0d |
| 70 | 1.4.4 | **Pruebas de usuario** | 5d | 2019-02-11 | 2019-02-15 |  |  | 0d |

| ID | WBS | Task | Duration | Start | Finish | Predecessors | Total float |
| --- | --- | --- | --- | --- | --- | --- | --- |
| 71 |  | Compilar, Armar e Instalar solución aplicativa - ambiente de pruebas de usuario | 1d | 2019-02-11 | 2019-02-11 | 69 | 0d |
| 72 |  | Acompañar instalación solución aplicativa - ambiente de pruebas de usuario | 1d | 2019-02-11 | 2019-02-11 | 69 | 24.5d |
| 73 |  | Aplicación instalada en ambiente de pruebas de usuario | 0d | 2019-02-11 | 2019-02-11 | 71 | 0d |
| 74 |  | Validar solución aplicativa instalada en ambiente de UAT | 0.5d | 2019-02-12 | 2019-02-12 | 73 | 0d |
| 75 |  | Coordinar las pruebas de aceptación del usuario | 0.5d | 2019-02-12 | 2019-02-12 | 74 | 0d |
| 76 |  | Ejecutar pruebas de usuario de la solución completa | 3d | 2019-02-13 | 2019-02-15 | 75 | 0d |
| 77 |  | Acompañar pruebas de usuario y atender hallazgos/defectos en la aplicación | 3d | 2019-02-13 | 2019-02-15 | 75 | 20.5d |
| 78 |  | Registrar hallazgos / defectos | 3d | 2019-02-13 | 2019-02-15 | 76FS-3d | 20.5d |
| 79 |  | Atender incidentes en ambientes | 3d | 2019-02-13 | 2019-02-15 | 76FS-3d | 0d |
| 80 |  | Validar defectos ajustados | 0.5d | 2019-02-15 | 2019-02-15 | 79FS-1d | 0d |
| 81 |  | Elaborar Oficio de Aceptación de Pruebas de Usuario y Liberación | 0.5d | 2019-02-15 | 2019-02-15 | 80 | 0d |
| 82 |  | Oficio de Aceptación de Pruebas de Usuario y Liberación | 0d | 2019-02-15 | 2019-02-15 | 81 | 0d |
| 83 |  | Ambientación de estrés y producción | 0d | 2019-02-15 | 2019-02-15 | 78 | 20.5d |
| 84 |  | Seguridad identidades estrés y producción | 0d | 2019-02-15 | 2019-02-15 | 78 | 20.5d |
| 85 | 1.4.7 | **Pruebas de vulnerabilidad** | 5d | 2019-02-18 | 2019-02-22 |  | 0d |
| 86 |  | Ejecutar pruebas de vulnerabilidad | 3d | 2019-02-18 | 2019-02-20 | 82 | 0d |
| 87 |  | Informar los hallazgos | 1d | 2019-02-21 | 2019-02-21 | 86 | 0d |
| 88 |  | Atender hallazgos | 1d | 2019-02-22 | 2019-02-22 | 87 | 0d |
| 89 |  | Certificar la seguridad de información | 2d | 2019-02-21 | 2019-02-22 | 86 | 0d |
| 90 |  | Reporte de pruebas de vulnerabilidad | 0d | 2019-02-22 | 2019-02-22 | 89 | 0d |
| 91 |  | Certificado de no vulnerabilidades | 0d | 2019-02-22 | 2019-02-22 | 90 | 0d |
| 92 | 1.4.8 | **Pruebas de estrés** | 5d | 2019-02-18 | 2019-02-22 |  | 15.5d |
| 93 |  | Compilar, Armar e Instalar solución aplicativa - ambiente de estrés | 0.5d | 2019-02-18 | 2019-02-18 | 82 | 20d |
| 94 |  | Automatizar caso de prueba de estrés | 3d | 2019-02-18 | 2019-02-20 | 82 | 15.5d |
| 95 |  | Ejecutar pruebas de estrés | 1d | 2019-02-21 | 2019-02-21 | 94 | 15.5d |
| 96 |  | Informar los hallazgos | 1d | 2019-02-22 | 2019-02-22 | 95 | 15.5d |
| 97 |  | Atender hallazgos | 1d | 2019-02-22 | 2019-02-22 | 96FS-1d | 15.5d |
| 98 |  | Formalizar informe de pruebas de estrés | 1d | 2019-02-22 | 2019-02-22 | 96FS-1d | 15.5d |
| 99 |  | Reporte de pruebas de estrés | 0d | 2019-02-22 | 2019-02-22 | 98 | 15.5d |
| 100 |  | Informe de pruebas de estrés | 0d | 2019-02-22 | 2019-02-22 | 99 | 15.5d |
| 101 | 1.5 | **Acompañamiento a la implementación** | 9.5d | 2019-02-25 | 2019-03-08 |  | 0d |
| 102 |  | Realizar toma aplicativa | 0.5d | 2019-02-25 | 2019-02-25 | 85 | 0d |
| 103 |  | Capacitar a Mesa de servicio (CDS) | 0d | 2019-02-25 | 2019-02-25 | 85FS+1d | 14.5d |
| 104 |  | Capacitar a Mesa de servicio (RAPE) | 0d | 2019-02-25 | 2019-02-25 | 85FS+1d | 14.5d |
| 105 |  | Instalar solución aplicativa - ambiente de producción | 1d | 2019-02-25 | 2019-02-26 | 102 | 0d |
| 106 |  | Acompañar en la implementación solución aplicativa - ambiente de producción | 1d | 2019-02-25 | 2019-02-26 | 102 | 14d |
| 107 |  | Informar de la puesta en producción | 0.5d | 2019-02-26 | 2019-02-26 | 105 | 0d |
| 108 |  | Dar seguimiento al periodo de estabilización | 7.5d | 2019-02-27 | 2019-03-08 | 107 | 0d |
| 109 |  | Aplicación instalada en ambiente de producción | 0d | 2019-02-26 | 2019-02-26 | 105 | 14d |
| 110 | 1.6 | **Cierre** | 6d | 2019-03-08 | 2019-03-18 |  | 0d |
| 111 |  | Cerrar proyecto | 6d | 2019-03-08 | 2019-03-18 | 108 | 0d |
| 112 |  | Proyecto cerrado | 0d | 2019-03-18 | 2019-03-18 | 111 | 0d |

## Version 2 (saved 2019-01-07, file 28_382_PDT_CON_P363_E302_07012019.mpp)

Note of the change: Se sube linea base para el nuevo repositorio

Last finish stays 2019-03-18. Complete tasks 1 → 14.

Changed:

| ID | Task | Start | Finish | Complete | Total float |
| --- | --- | --- | --- | --- | --- |
| 1 | **DyP_IPP - Mejoras al Módulo de descargas de acuses del IDE** |  |  | 3% → 17% |  |
| 2 | **Análisis** |  | 2019-01-07 A | 19% → 100% | 49.5d → none |
| 4 | **Especificación Funcional** |  | 2019-01-03 A | 16% → 100% | 51.5d → none |
| 5 | **Documentar la especificación funcional** |  | 2018-12-31 A | 25% → 100% | 0d → none |
| 6 | Elaborar documentos de especificación funcional |  | 2018-12-31 A | 25% → 100% | 0d → none |
| 7 | Revisar documentación de la especificación funcional (Analista) | 2018-12-27 A | 2018-12-31 A | 0% → 100% | 53.5d → none |
| 8 | Revisar documentación de la especificación funcional (Soluciones de Negocio) | 2018-12-27 A | 2019-01-03 A | 0% → 100% | 0d → none |
| 9 | **Entregables** | 2019-01-07 A | 2019-01-07 A | 0% → 100% | 0d → none |
| 10 | 28_382_CRN | 2019-01-07 A | 2019-01-07 A | 0% → 100% | 0d → none |
| 11 | 28_382_CCV | 2019-01-07 A | 2019-01-07 A | 0% → 100% | 0d → none |
| 12 | 28_382_EIU_IDEWEB | 2019-01-07 A | 2019-01-07 A | 0% → 100% | 0d → none |
| 13 | 28_382_EZS | 2019-01-07 A | 2019-01-07 A | 0% → 100% | 0d → none |
| 14 | 28_382_ECU_IDEWEB | 2019-01-07 A | 2019-01-07 A | 0% → 100% | 0d → none |
| 15 | 28_382_MTB | 2019-01-07 A | 2019-01-07 A | 0% → 100% | 0d → none |
| 16 | 28_382_MCU | 2019-01-07 A | 2019-01-07 A | 0% → 100% | 0d → none |
| 17 | 28_382_RDP_IDEWEB | 2019-01-07 A | 2019-01-07 A | 0% → 100% | 0d → none |
| 18 | Formalizar documentación de la especificación funcional | 2019-01-07 A | 2019-01-07 A | 0% → 100% | 49.5d → none |
| 19 | Especificación funcional formalizada | 2019-01-07 A | 2019-01-07 A | 0% → 100% | 49.5d → none |

## Version 3 (saved 2019-01-07, file 28_382_PDT_CON_P363_E302_02012019.mpp)

Note of the change: Se sube linea base para el nuevo repositorio

Last finish stays 2019-03-18. Complete tasks 14 → 3.

Changed:

| ID | Task | Start | Finish | Complete | Total float |
| --- | --- | --- | --- | --- | --- |
| 1 | **DyP_IPP - Mejoras al Módulo de descargas de acuses del IDE** |  |  | 17% → 13% |  |
| 2 | **Análisis** |  | 2019-01-07 A → 2019-01-07 | 100% → 77% | none → 49.5d |
| 4 | **Especificación Funcional** |  | 2019-01-03 A → 2019-01-03 | 100% → 77% | none → 0d |
| 8 | Revisar documentación de la especificación funcional (Soluciones de Negocio) | 2018-12-27 A → 2018-12-27 | 2019-01-03 A → 2019-01-03 | 100% → 0% | none → 0d |
| 9 | **Entregables** | 2019-01-07 A → 2019-01-07 | 2019-01-07 A → 2019-01-07 | 100% → 0% | none → 0d |
| 10 | 28_382_CRN | 2019-01-07 A → 2019-01-07 | 2019-01-07 A → 2019-01-07 | 100% → 0% | none → 0d |
| 11 | 28_382_CCV | 2019-01-07 A → 2019-01-07 | 2019-01-07 A → 2019-01-07 | 100% → 0% | none → 0d |
| 12 | 28_382_EIU_IDEWEB | 2019-01-07 A → 2019-01-07 | 2019-01-07 A → 2019-01-07 | 100% → 0% | none → 0d |
| 13 | 28_382_EZS | 2019-01-07 A → 2019-01-07 | 2019-01-07 A → 2019-01-07 | 100% → 0% | none → 0d |
| 14 | 28_382_ECU_IDEWEB | 2019-01-07 A → 2019-01-07 | 2019-01-07 A → 2019-01-07 | 100% → 0% | none → 0d |
| 15 | 28_382_MTB | 2019-01-07 A → 2019-01-07 | 2019-01-07 A → 2019-01-07 | 100% → 0% | none → 0d |
| 16 | 28_382_MCU | 2019-01-07 A → 2019-01-07 | 2019-01-07 A → 2019-01-07 | 100% → 0% | none → 0d |
| 17 | 28_382_RDP_IDEWEB | 2019-01-07 A → 2019-01-07 | 2019-01-07 A → 2019-01-07 | 100% → 0% | none → 0d |
| 18 | Formalizar documentación de la especificación funcional | 2019-01-07 A → 2019-01-07 | 2019-01-07 A → 2019-01-07 | 100% → 0% | none → 49.5d |
| 19 | Especificación funcional formalizada | 2019-01-07 A → 2019-01-07 | 2019-01-07 A → 2019-01-07 | 100% → 0% | none → 49.5d |

## Version 4 (saved 2019-01-07, file 28_382_PDT_CON_P363_E302_06122018.mpp)

Note of the change: Se sube linea base para el nuevo repositorio

Last finish stays 2019-03-18. Complete tasks 3 → 1.

Changed:

| ID | Task | Start | Finish | Complete | Total float |
| --- | --- | --- | --- | --- | --- |
| 1 | **DyP_IPP - Mejoras al Módulo de descargas de acuses del IDE** |  |  | 13% → 9% |  |
| 2 | **Análisis** |  |  | 77% → 52% |  |
| 4 | **Especificación Funcional** |  |  | 77% → 51% | 0d → 51.5d |
| 5 | **Documentar la especificación funcional** |  | 2018-12-31 A → 2018-12-31 | 100% → 80% | none → 0d |
| 6 | Elaborar documentos de especificación funcional |  | 2018-12-31 A → 2018-12-31 | 100% → 80% | none → 0d |
| 7 | Revisar documentación de la especificación funcional (Analista) | 2018-12-27 A → 2018-12-27 | 2018-12-31 A → 2018-12-31 | 100% → 0% | none → 53.5d |

## Version 5 (saved 2019-01-07, file 28_382_PDT_CON_P363_E302_19122018.mpp)

Note of the change: Se sube linea base para el nuevo repositorio

Last finish stays 2019-03-18.

Changed:

| ID | Task | Complete |
| --- | --- | --- |
| 1 | **DyP_IPP - Mejoras al Módulo de descargas de acuses del IDE** | 9% → 5% |
| 2 | **Análisis** | 52% → 28% |
| 4 | **Especificación Funcional** | 51% → 25% |
| 5 | **Documentar la especificación funcional** | 80% → 40% |
| 6 | Elaborar documentos de especificación funcional | 80% → 40% |

## Version 6 (saved 2019-01-19, file 28_382_PDT_CON_P363_E302_19012019.mpp)

Note of the change: Se sube linea base para el nuevo repositorio

Last finish stays 2019-03-18. Complete tasks 1 → 25.

Changed:

| ID | Task | Start | Finish | Complete | Total float |
| --- | --- | --- | --- | --- | --- |
| 1 | **DyP_IPP - Mejoras al Módulo de descargas de acuses del IDE** |  |  | 5% → 30% |  |
| 2 | **Análisis** |  | 2019-01-07 A | 28% → 100% | 49.5d → none |
| 4 | **Especificación Funcional** |  | 2019-01-03 A | 25% → 100% | 51.5d → none |
| 5 | **Documentar la especificación funcional** |  | 2018-12-31 A | 40% → 100% | 0d → none |
| 6 | Elaborar documentos de especificación funcional |  | 2018-12-31 A | 40% → 100% | 0d → none |
| 7 | Revisar documentación de la especificación funcional (Analista) | 2018-12-27 A | 2018-12-31 A | 0% → 100% | 53.5d → none |
| 8 | Revisar documentación de la especificación funcional (Soluciones de Negocio) | 2018-12-27 A | 2019-01-03 A | 0% → 100% | 0d → none |
| 9 | **Entregables** | 2019-01-07 A | 2019-01-07 A | 0% → 100% | 0d → none |
| 10 | 28_382_CRN | 2019-01-07 A | 2019-01-07 A | 0% → 100% | 0d → none |
| 11 | 28_382_CCV | 2019-01-07 A | 2019-01-07 A | 0% → 100% | 0d → none |
| 12 | 28_382_EIU_IDEWEB | 2019-01-07 A | 2019-01-07 A | 0% → 100% | 0d → none |
| 13 | 28_382_EZS | 2019-01-07 A | 2019-01-07 A | 0% → 100% | 0d → none |
| 14 | 28_382_ECU_IDEWEB | 2019-01-07 A | 2019-01-07 A | 0% → 100% | 0d → none |
| 15 | 28_382_MTB | 2019-01-07 A | 2019-01-07 A | 0% → 100% | 0d → none |
| 16 | 28_382_MCU | 2019-01-07 A | 2019-01-07 A | 0% → 100% | 0d → none |
| 17 | 28_382_RDP_IDEWEB | 2019-01-07 A | 2019-01-07 A | 0% → 100% | 0d → none |
| 18 | Formalizar documentación de la especificación funcional | 2019-01-07 A | 2019-01-07 A | 0% → 100% | 49.5d → none |
| 19 | Especificación funcional formalizada | 2019-01-07 A | 2019-01-07 A | 0% → 100% | 49.5d → none |
| 20 | **Diseño** | 2019-01-07 A | 2019-01-11 A | 0% → 100% | 0d → none |
| 21 | **Diseño de Arquitectura Tecnológica** | 2019-01-07 A | 2019-01-11 A | 0% → 100% | 0d → none |
| 22 | Revisar documentos de la arquitectura de la solución | 2019-01-07 A | 2019-01-07 A | 0% → 100% | 0d → none |
| 23 | **Diseño Aplicativo Detallado (MDAP)** | 2019-01-08 A | 2019-01-11 A | 0% → 100% | 0d → none |
| 24 | **Elaborar Documentos de Diseño** | 2019-01-08 A | 2019-01-11 A | 0% → 100% | 0d → none |
| 25 | Actualizar documentos de diseño | 2019-01-08 A | 2019-01-11 A | 0% → 100% | 0d → none |
| 26 | Revisar documentos de diseño (Analista) | 2019-01-11 A | 2019-01-11 A | 0% → 100% | 0d → none |
| 27 | Revisar documentación de la arquitectura tecnológica (ACTT) | 2019-01-11 A | 2019-01-11 A | 0% → 100% | 0d → none |
| 28 | **Entregables** | 2019-01-11 A | 2019-01-11 A | 0% → 100% | 0d → none |
| 29 | 28_382_RPP | 2019-01-11 A | 2019-01-11 A | 0% → 100% | 0d → none |
| 30 | 28_382_VBD | 2019-01-11 A | 2019-01-11 A | 0% → 100% | 0d → none |
| 31 | 28_382_DIC_IDEWEB | 2019-01-11 A | 2019-01-11 A | 0% → 100% | 0d → none |
| 32 | 28_382_MLF | 2019-01-11 A | 2019-01-11 A | 0% → 100% | 0d → none |
| 33 | Formalizar documentación de la arquitectura tecnológica | 2019-01-11 A | 2019-01-11 A | 0% → 100% | 0d → none |
| 34 | Arquitectura tecnológica formalizada | 2019-01-11 A | 2019-01-11 A | 0% → 100% | 0d → none |
| 35 | **Desarrollo** | 2019-01-14 A |  | 0% → 20% | 0d → 30.5d |
| 36 | **Desarrollar / parametrizar aplicación** | 2019-01-14 A |  | 0% → 33% |  |
| 37 | **Desarrollar artefactos de desarrollo** | 2019-01-14 A |  | 0% → 33% |  |
| 38 | Integrar Servicios - (Selladora, Envió Correo, Autentificación, Acceso y Encriptar Archivo) | 2019-01-14 A | 2019-01-25 A | 0% → 100% | 0d → none |

## Version 7 (saved 2019-02-11, file 28_382_PDT_CON_P363_E302.mpp)

Note of the change: Se sube linea base para el nuevo repositorio

Last finish 2019-03-18 → 2019-05-16 (+59d). Complete tasks 25 → 0.

Changed:

| ID | Task | Start | Finish | Complete | Total float | Other |
| --- | --- | --- | --- | --- | --- | --- |
| 1 | **DyP_IPP - Mejoras al Módulo de descargas de acuses del IDE** | 2018-12-10 A → 2019-02-11 (+63d) | 2019-03-18 → 2019-05-16 (+59d) | 30% → 0% |  |  |
| 2 | **Análisis** | 2018-12-10 A → 2019-02-11 (+63d) | 2019-01-07 A → 2019-03-07 (+59d) | 100% → 0% | none → 0d |  |
| 3 | Revisar Información de Insumos | 2018-12-10 A → 2019-02-11 (+63d) | 2018-12-10 A → 2019-02-11 (+63d) | 100% → 0% | none → 0d |  |
| 4 | **Especificación Funcional** | 2018-12-11 A → 2019-02-12 (+63d) | 2019-01-03 A → 2019-03-05 (+61d) | 100% → 0% | none → 0d |  |
| 5 | **Documentar la especificación funcional** | 2018-12-11 A → 2019-02-12 (+63d) | 2018-12-31 A → 2019-03-01 (+60d) | 100% → 0% | none → 0d |  |
| 6 | Elaborar documentos de especificación funcional | 2018-12-11 A → 2019-02-12 (+63d) | 2018-12-31 A → 2019-03-01 (+60d) | 100% → 0% | none → 0d |  |
| 7 | Revisar documentación de la especificación funcional (Analista) | 2018-12-27 A → 2019-02-27 (+62d) | 2018-12-31 A → 2019-03-01 (+60d) | 100% → 0% | none → 53.5d |  |
| 8 | Revisar documentación de la especificación funcional (Soluciones de Negocio) | 2018-12-27 A → 2019-02-27 (+62d) | 2019-01-03 A → 2019-03-05 (+61d) | 100% → 0% | none → 0d |  |
| 9 | **Entregables** | 2019-01-07 A → 2019-03-07 (+59d) | 2019-01-07 A → 2019-03-07 (+59d) | 100% → 0% | none → 0d |  |
| 10 | 28_382_CRN | 2019-01-07 A → 2019-03-07 (+59d) | 2019-01-07 A → 2019-03-07 (+59d) | 100% → 0% | none → 0d |  |
| 11 | 28_382_CCV | 2019-01-07 A → 2019-03-07 (+59d) | 2019-01-07 A → 2019-03-07 (+59d) | 100% → 0% | none → 0d |  |
| 12 | 28_382_EIU_IDEWEB | 2019-01-07 A → 2019-03-07 (+59d) | 2019-01-07 A → 2019-03-07 (+59d) | 100% → 0% | none → 0d |  |
| 13 | 28_382_EZS | 2019-01-07 A → 2019-03-07 (+59d) | 2019-01-07 A → 2019-03-07 (+59d) | 100% → 0% | none → 0d |  |
| 14 | 28_382_ECU_IDEWEB | 2019-01-07 A → 2019-03-07 (+59d) | 2019-01-07 A → 2019-03-07 (+59d) | 100% → 0% | none → 0d |  |
| 15 | 28_382_MTB | 2019-01-07 A → 2019-03-07 (+59d) | 2019-01-07 A → 2019-03-07 (+59d) | 100% → 0% | none → 0d |  |
| 16 | 28_382_MCU | 2019-01-07 A → 2019-03-07 (+59d) | 2019-01-07 A → 2019-03-07 (+59d) | 100% → 0% | none → 0d |  |
| 17 | 28_382_RDP_IDEWEB | 2019-01-07 A → 2019-03-07 (+59d) | 2019-01-07 A → 2019-03-07 (+59d) | 100% → 0% | none → 0d |  |
| 18 | Formalizar documentación de la especificación funcional | 2019-01-07 A → 2019-03-07 (+59d) | 2019-01-07 A → 2019-03-07 (+59d) | 100% → 0% | none → 49.5d |  |
| 19 | Especificación funcional formalizada | 2019-01-07 A → 2019-03-07 (+59d) | 2019-01-07 A → 2019-03-07 (+59d) | 100% → 0% | none → 49.5d |  |
| 20 | **Diseño** | 2019-01-07 A → 2019-03-07 (+59d) | 2019-01-11 A → 2019-03-13 (+61d) | 100% → 0% | none → 0d |  |
| 21 | **Diseño de Arquitectura Tecnológica** | 2019-01-07 A → 2019-03-07 (+59d) | 2019-01-11 A → 2019-03-13 (+61d) | 100% → 0% | none → 0d |  |
| 22 | Revisar documentos de la arquitectura de la solución | 2019-01-07 A → 2019-03-07 (+59d) | 2019-01-07 A → 2019-03-07 (+59d) | 100% → 0% | none → 0d |  |
| 23 | **Diseño Aplicativo Detallado (MDAP)** | 2019-01-08 A → 2019-03-08 (+59d) | 2019-01-11 A → 2019-03-13 (+61d) | 100% → 0% | none → 0d |  |
| 24 | **Elaborar Documentos de Diseño** | 2019-01-08 A → 2019-03-08 (+59d) | 2019-01-11 A → 2019-03-13 (+61d) | 100% → 0% | none → 0d |  |
| 25 | Actualizar documentos de diseño | 2019-01-08 A → 2019-03-08 (+59d) | 2019-01-11 A → 2019-03-13 (+61d) | 100% → 0% | none → 0d |  |
| 26 | Revisar documentos de diseño (Analista) | 2019-01-11 A → 2019-03-13 (+61d) | 2019-01-11 A → 2019-03-13 (+61d) | 100% → 0% | none → 0d |  |
| 27 | Revisar documentación de la arquitectura tecnológica (ACTT) | 2019-01-11 A → 2019-03-13 (+61d) | 2019-01-11 A → 2019-03-13 (+61d) | 100% → 0% | none → 0d |  |
| 28 | **Entregables** | 2019-01-11 A → 2019-03-13 (+61d) | 2019-01-11 A → 2019-03-13 (+61d) | 100% → 0% | none → 0d |  |
| 29 | 28_382_RPP | 2019-01-11 A → 2019-03-13 (+61d) | 2019-01-11 A → 2019-03-13 (+61d) | 100% → 0% | none → 0d |  |
| 30 | 28_382_VBD | 2019-01-11 A → 2019-03-13 (+61d) | 2019-01-11 A → 2019-03-13 (+61d) | 100% → 0% | none → 0d |  |
| 31 | 28_382_DIC_IDEWEB | 2019-01-11 A → 2019-03-13 (+61d) | 2019-01-11 A → 2019-03-13 (+61d) | 100% → 0% | none → 0d |  |
| 32 | 28_382_MLF | 2019-01-11 A → 2019-03-13 (+61d) | 2019-01-11 A → 2019-03-13 (+61d) | 100% → 0% | none → 0d |  |
| 33 | Formalizar documentación de la arquitectura tecnológica | 2019-01-11 A → 2019-03-13 (+61d) | 2019-01-11 A → 2019-03-13 (+61d) | 100% → 0% | none → 0d |  |
| 34 | Arquitectura tecnológica formalizada | 2019-01-11 A → 2019-03-13 (+61d) | 2019-01-11 A → 2019-03-13 (+61d) | 100% → 0% | none → 0d |  |
| 35 | **Desarrollo** | 2019-01-14 A → 2019-03-14 (+59d) | 2019-02-01 → 2019-04-03 (+61d) | 20% → 0% | 30.5d → 0d |  |
| 36 | **Desarrollar / parametrizar aplicación** | 2019-01-14 A → 2019-03-14 (+59d) | 2019-01-25 → 2019-03-27 (+61d) | 33% → 0% |  |  |
| 37 | **Desarrollar artefactos de desarrollo** | 2019-01-14 A → 2019-03-14 (+59d) | 2019-01-25 → 2019-03-27 (+61d) | 33% → 0% |  |  |
| 38 | Integrar Servicios - (Selladora, Envió Correo, Autentificación, Acceso y Encriptar Archivo) | 2019-01-14 A → 2019-03-14 (+59d) | 2019-01-25 A → 2019-03-27 (+61d) | 100% → 0% | none → 0d |  |
| 39 | Integrar Servicios - (Presentación Internet/Modulo, Recepción, Validación y Carga DWH) | 2019-01-14 → 2019-03-14 (+59d) | 2019-01-25 → 2019-03-27 (+61d) |  |  |  |
| 40 | Integrar Servicios - (Monitor, Monitor Servicios y Monitor DEC_IDE_Tradicional) | 2019-01-14 → 2019-03-14 (+59d) | 2019-01-25 → 2019-03-27 (+61d) |  |  |  |
| 41 | Integrar código y versionamiento | 2019-01-21 → 2019-03-21 (+59d) | 2019-01-25 → 2019-03-27 (+61d) |  |  |  |
| 42 | Elaborar estrategia, plan y casos prueba | 2019-01-21 → 2019-03-21 (+59d) | 2019-01-25 → 2019-03-27 (+61d) |  |  |  |
| 43 | Realizar pruebas unitarias | 2019-01-28 → 2019-03-28 (+59d) | 2019-01-28 → 2019-03-28 (+59d) |  |  |  |
| 44 | Realizar pruebas calidad de código | 2019-01-29 → 2019-03-29 (+59d) | 2019-01-29 → 2019-03-29 (+59d) |  |  |  |
| 45 | Realizar pruebas funcionales de la aplicación | 2019-01-30 → 2019-04-01 (+61d) | 2019-02-01 → 2019-04-03 (+61d) |  |  |  |
| 46 | Realizar pruebas de vulnerabilidad (ambiente desarrollo 50%) | 2019-01-30 → 2019-04-01 (+61d) | 2019-02-01 → 2019-04-03 (+61d) |  |  |  |
| 47 | Generar y entregar paquete aplicativo a la AVL | 2019-02-01 → 2019-04-03 (+61d) | 2019-02-01 → 2019-04-03 (+61d) |  |  |  |
| 48 | **Entregables** | 2019-02-01 → 2019-04-03 (+61d) | 2019-02-01 → 2019-04-03 (+61d) |  |  |  |
| 49 | Reporte de pruebas unitarias | 2019-02-01 → 2019-04-03 (+61d) | 2019-02-01 → 2019-04-03 (+61d) |  |  |  |
| 50 | Reporte de pruebas de calidad de código | 2019-02-01 → 2019-04-03 (+61d) | 2019-02-01 → 2019-04-03 (+61d) |  |  |  |
| 51 | Reporte de pruebas de vulnerabilidad (50% desarrollo) | 2019-02-01 → 2019-04-03 (+61d) | 2019-02-01 → 2019-04-03 (+61d) |  |  |  |
| 52 | **Paquete (s)** | 2019-02-01 → 2019-04-03 (+61d) | 2019-02-01 → 2019-04-03 (+61d) |  |  |  |
| 53 | 28_382_MAC_IDEWEB | 2019-02-01 → 2019-04-03 (+61d) | 2019-02-01 → 2019-04-03 (+61d) |  |  |  |
| 54 | 28_382_MAI_IDEWEB | 2019-02-01 → 2019-04-03 (+61d) | 2019-02-01 → 2019-04-03 (+61d) |  |  |  |
| 55 | DLCC19101DE1.dp | 2019-02-01 → 2019-04-03 (+61d) | 2019-02-01 → 2019-04-03 (+61d) |  |  | was named DLCC18481DE1.dp |
| 56 | DLCC19101DE1 | 2019-02-01 → 2019-04-03 (+61d) | 2019-02-01 → 2019-04-03 (+61d) |  |  | was named DLCC18481DE1 |
| 57 | DLCC19101DE1 | 2019-02-01 → 2019-04-03 (+61d) | 2019-02-01 → 2019-04-03 (+61d) |  |  | was named DLCC18481DE1 |
| 58 | **Pruebas** | 2019-02-04 → 2019-04-04 (+59d) | 2019-02-22 → 2019-04-24 (+61d) |  |  |  |
| 59 | Ambientación integración y UAT | 2019-02-04 → 2019-04-04 (+59d) | 2019-02-04 → 2019-04-04 (+59d) |  |  |  |
| 60 | Seguridad identidades integración y UAT | 2019-02-04 → 2019-04-04 (+59d) | 2019-02-04 → 2019-04-04 (+59d) |  |  |  |
| 61 | **Pruebas de integración aplicativa** | 2019-02-04 → 2019-04-04 (+59d) | 2019-02-08 → 2019-04-10 (+61d) |  |  |  |
| 62 | Compilar, armar e instalar solución aplicativa | 2019-02-04 → 2019-04-04 (+59d) | 2019-02-04 → 2019-04-04 (+59d) |  |  |  |
| 63 | Acompañamiento a compilar, armar e instalar solución aplicativa | 2019-02-04 → 2019-04-04 (+59d) | 2019-02-04 → 2019-04-04 (+59d) |  |  |  |
| 64 | Aplicación instalada en ambiente de integración | 2019-02-04 → 2019-04-04 (+59d) | 2019-02-04 → 2019-04-04 (+59d) |  |  |  |
| 65 | Ejecutar pruebas de integración aplicativa | 2019-02-05 → 2019-04-05 (+59d) | 2019-02-07 → 2019-04-09 (+61d) |  |  |  |
| 66 | Realizar pruebas de vulnerabilidad (ambiente integración 75%) | 2019-02-05 → 2019-04-05 (+59d) | 2019-02-07 → 2019-04-09 (+61d) |  |  |  |
| 67 | Atención a la iniciativa para la solución aplicativa | 2019-02-05 → 2019-04-05 (+59d) | 2019-02-07 → 2019-04-09 (+61d) |  |  |  |
| 68 | Reporte de prueba de integración aplicativa | 2019-02-08 → 2019-04-10 (+61d) | 2019-02-08 → 2019-04-10 (+61d) |  |  |  |
| 69 | Actualizar paquete aplicativo a la AVL | 2019-02-08 → 2019-04-10 (+61d) | 2019-02-08 → 2019-04-10 (+61d) |  |  |  |
| 70 | **Pruebas de usuario** | 2019-02-11 → 2019-04-11 (+59d) | 2019-02-15 → 2019-04-17 (+61d) |  |  |  |

| ID | Task | Start | Finish |
| --- | --- | --- | --- |
| 71 | Compilar, Armar e Instalar solución aplicativa - ambiente de pruebas de usuario | 2019-02-11 → 2019-04-11 (+59d) | 2019-02-11 → 2019-04-11 (+59d) |
| 72 | Acompañar instalación solución aplicativa - ambiente de pruebas de usuario | 2019-02-11 → 2019-04-11 (+59d) | 2019-02-11 → 2019-04-11 (+59d) |
| 73 | Aplicación instalada en ambiente de pruebas de usuario | 2019-02-11 → 2019-04-11 (+59d) | 2019-02-11 → 2019-04-11 (+59d) |
| 74 | Validar solución aplicativa instalada en ambiente de UAT | 2019-02-12 → 2019-04-12 (+59d) | 2019-02-12 → 2019-04-12 (+59d) |
| 75 | Coordinar las pruebas de aceptación del usuario | 2019-02-12 → 2019-04-12 (+59d) | 2019-02-12 → 2019-04-12 (+59d) |
| 76 | Ejecutar pruebas de usuario de la solución completa | 2019-02-13 → 2019-04-15 (+61d) | 2019-02-15 → 2019-04-17 (+61d) |
| 77 | Acompañar pruebas de usuario y atender hallazgos/defectos en la aplicación | 2019-02-13 → 2019-04-15 (+61d) | 2019-02-15 → 2019-04-17 (+61d) |
| 78 | Registrar hallazgos / defectos | 2019-02-13 → 2019-04-15 (+61d) | 2019-02-15 → 2019-04-17 (+61d) |
| 79 | Atender incidentes en ambientes | 2019-02-13 → 2019-04-15 (+61d) | 2019-02-15 → 2019-04-17 (+61d) |
| 80 | Validar defectos ajustados | 2019-02-15 → 2019-04-17 (+61d) | 2019-02-15 → 2019-04-17 (+61d) |
| 81 | Elaborar Oficio de Aceptación de Pruebas de Usuario y Liberación | 2019-02-15 → 2019-04-17 (+61d) | 2019-02-15 → 2019-04-17 (+61d) |
| 82 | Oficio de Aceptación de Pruebas de Usuario y Liberación | 2019-02-15 → 2019-04-17 (+61d) | 2019-02-15 → 2019-04-17 (+61d) |
| 83 | Ambientación de estrés y producción | 2019-02-15 → 2019-04-17 (+61d) | 2019-02-15 → 2019-04-17 (+61d) |
| 84 | Seguridad identidades estrés y producción | 2019-02-15 → 2019-04-17 (+61d) | 2019-02-15 → 2019-04-17 (+61d) |
| 85 | **Pruebas de vulnerabilidad** | 2019-02-18 → 2019-04-18 (+59d) | 2019-02-22 → 2019-04-24 (+61d) |
| 86 | Ejecutar pruebas de vulnerabilidad | 2019-02-18 → 2019-04-18 (+59d) | 2019-02-20 → 2019-04-22 (+61d) |
| 87 | Informar los hallazgos | 2019-02-21 → 2019-04-23 (+61d) | 2019-02-21 → 2019-04-23 (+61d) |
| 88 | Atender hallazgos | 2019-02-22 → 2019-04-24 (+61d) | 2019-02-22 → 2019-04-24 (+61d) |
| 89 | Certificar la seguridad de información | 2019-02-21 → 2019-04-23 (+61d) | 2019-02-22 → 2019-04-24 (+61d) |
| 90 | Reporte de pruebas de vulnerabilidad | 2019-02-22 → 2019-04-24 (+61d) | 2019-02-22 → 2019-04-24 (+61d) |
| 91 | Certificado de no vulnerabilidades | 2019-02-22 → 2019-04-24 (+61d) | 2019-02-22 → 2019-04-24 (+61d) |
| 92 | **Pruebas de estrés** | 2019-02-18 → 2019-04-18 (+59d) | 2019-02-22 → 2019-04-24 (+61d) |
| 93 | Compilar, Armar e Instalar solución aplicativa - ambiente de estrés | 2019-02-18 → 2019-04-18 (+59d) | 2019-02-18 → 2019-04-18 (+59d) |
| 94 | Automatizar caso de prueba de estrés | 2019-02-18 → 2019-04-18 (+59d) | 2019-02-20 → 2019-04-22 (+61d) |
| 95 | Ejecutar pruebas de estrés | 2019-02-21 → 2019-04-23 (+61d) | 2019-02-21 → 2019-04-23 (+61d) |
| 96 | Informar los hallazgos | 2019-02-22 → 2019-04-24 (+61d) | 2019-02-22 → 2019-04-24 (+61d) |
| 97 | Atender hallazgos | 2019-02-22 → 2019-04-24 (+61d) | 2019-02-22 → 2019-04-24 (+61d) |
| 98 | Formalizar informe de pruebas de estrés | 2019-02-22 → 2019-04-24 (+61d) | 2019-02-22 → 2019-04-24 (+61d) |
| 99 | Reporte de pruebas de estrés | 2019-02-22 → 2019-04-24 (+61d) | 2019-02-22 → 2019-04-24 (+61d) |
| 100 | Informe de pruebas de estrés | 2019-02-22 → 2019-04-24 (+61d) | 2019-02-22 → 2019-04-24 (+61d) |
| 101 | **Acompañamiento a la implementación** | 2019-02-25 → 2019-04-25 (+59d) | 2019-03-08 → 2019-05-08 (+61d) |
| 102 | Realizar toma aplicativa | 2019-02-25 → 2019-04-25 (+59d) | 2019-02-25 → 2019-04-25 (+59d) |
| 103 | Capacitar a Mesa de servicio (CDS) | 2019-02-25 → 2019-04-25 (+59d) | 2019-02-25 → 2019-04-25 (+59d) |
| 104 | Capacitar a Mesa de servicio (RAPE) | 2019-02-25 → 2019-04-25 (+59d) | 2019-02-25 → 2019-04-25 (+59d) |
| 105 | Instalar solución aplicativa - ambiente de producción | 2019-02-25 → 2019-04-25 (+59d) | 2019-02-26 → 2019-04-26 (+59d) |
| 106 | Acompañar en la implementación solución aplicativa - ambiente de producción | 2019-02-25 → 2019-04-25 (+59d) | 2019-02-26 → 2019-04-26 (+59d) |
| 107 | Informar de la puesta en producción | 2019-02-26 → 2019-04-26 (+59d) | 2019-02-26 → 2019-04-26 (+59d) |
| 108 | Dar seguimiento al periodo de estabilización | 2019-02-27 → 2019-04-29 (+61d) | 2019-03-08 → 2019-05-08 (+61d) |
| 109 | Aplicación instalada en ambiente de producción | 2019-02-26 → 2019-04-26 (+59d) | 2019-02-26 → 2019-04-26 (+59d) |
| 110 | **Cierre** | 2019-03-08 → 2019-05-08 (+61d) | 2019-03-18 → 2019-05-16 (+59d) |
| 111 | Cerrar proyecto | 2019-03-08 → 2019-05-08 (+61d) | 2019-03-18 → 2019-05-16 (+59d) |
| 112 | Proyecto cerrado | 2019-03-18 → 2019-05-16 (+59d) | 2019-03-18 → 2019-05-16 (+59d) |

## Version 8 (saved 2019-03-14, file 28_382_PDT_CON_P363_E302_20190313.mpp)

Note of the change: Se sube linea base para el nuevo repositorio

Last finish stays 2019-05-16. Complete tasks 0 → 24.

Changed:

| ID | Task | Start | Finish | Complete | Total float |
| --- | --- | --- | --- | --- | --- |
| 1 | **DyP_IPP - Mejoras al Módulo de descargas de acuses del IDE** | 2019-02-11 A |  | 0% → 23% |  |
| 2 | **Análisis** | 2019-02-11 A | 2019-03-07 A | 0% → 100% | 0d → none |
| 3 | Revisar Información de Insumos | 2019-02-11 A | 2019-02-11 A | 0% → 100% | 0d → none |
| 4 | **Especificación Funcional** | 2019-02-12 A | 2019-03-05 A | 0% → 100% | 0d → none |
| 5 | **Documentar la especificación funcional** | 2019-02-12 A | 2019-03-01 A | 0% → 100% | 0d → none |
| 6 | Elaborar documentos de especificación funcional | 2019-02-12 A | 2019-03-01 A | 0% → 100% | 0d → none |
| 7 | Revisar documentación de la especificación funcional (Analista) | 2019-02-27 A | 2019-03-01 A | 0% → 100% | 53.5d → none |
| 8 | Revisar documentación de la especificación funcional (Soluciones de Negocio) | 2019-02-27 A | 2019-03-05 A | 0% → 100% | 0d → none |
| 9 | **Entregables** | 2019-03-07 A | 2019-03-07 A | 0% → 100% | 0d → none |
| 10 | 28_382_CRN | 2019-03-07 A | 2019-03-07 A | 0% → 100% | 0d → none |
| 11 | 28_382_CCV | 2019-03-07 A | 2019-03-07 A | 0% → 100% | 0d → none |
| 12 | 28_382_EIU_IDEWEB | 2019-03-07 A | 2019-03-07 A | 0% → 100% | 0d → none |
| 13 | 28_382_EZS | 2019-03-07 A | 2019-03-07 A | 0% → 100% | 0d → none |
| 14 | 28_382_ECU_IDEWEB | 2019-03-07 A | 2019-03-07 A | 0% → 100% | 0d → none |
| 15 | 28_382_MTB | 2019-03-07 A | 2019-03-07 A | 0% → 100% | 0d → none |
| 16 | 28_382_MCU | 2019-03-07 A | 2019-03-07 A | 0% → 100% | 0d → none |
| 17 | 28_382_RDP_IDEWEB | 2019-03-07 A | 2019-03-07 A | 0% → 100% | 0d → none |
| 18 | Formalizar documentación de la especificación funcional | 2019-03-07 A | 2019-03-07 A | 0% → 100% | 49.5d → none |
| 19 | Especificación funcional formalizada | 2019-03-07 A | 2019-03-07 A | 0% → 100% | 49.5d → none |
| 20 | **Diseño** | 2019-03-07 A | 2019-03-13 A | 0% → 100% | 0d → none |
| 21 | **Diseño de Arquitectura Tecnológica** | 2019-03-07 A | 2019-03-13 A | 0% → 100% | 0d → none |
| 22 | Revisar documentos de la arquitectura de la solución | 2019-03-07 A | 2019-03-07 A | 0% → 100% | 0d → none |
| 23 | **Diseño Aplicativo Detallado (MDAP)** | 2019-03-08 A | 2019-03-13 A | 0% → 100% | 0d → none |
| 24 | **Elaborar Documentos de Diseño** | 2019-03-08 A | 2019-03-13 A | 0% → 100% | 0d → none |
| 25 | Actualizar documentos de diseño | 2019-03-08 A | 2019-03-13 A | 0% → 100% | 0d → none |
| 26 | Revisar documentos de diseño (Analista) | 2019-03-13 A | 2019-03-13 A | 0% → 100% | 0d → none |
| 27 | Revisar documentación de la arquitectura tecnológica (ACTT) | 2019-03-13 A | 2019-03-13 A | 0% → 100% | 0d → none |
| 28 | **Entregables** | 2019-03-13 A | 2019-03-13 A | 0% → 100% | 0d → none |
| 29 | 28_382_RPP | 2019-03-13 A | 2019-03-13 A | 0% → 100% | 0d → none |
| 30 | 28_382_VBD | 2019-03-13 A | 2019-03-13 A | 0% → 100% | 0d → none |
| 31 | 28_382_DIC_IDEWEB | 2019-03-13 A | 2019-03-13 A | 0% → 100% | 0d → none |
| 32 | 28_382_MLF | 2019-03-13 A | 2019-03-13 A | 0% → 100% | 0d → none |
| 33 | Formalizar documentación de la arquitectura tecnológica | 2019-03-13 A | 2019-03-13 A | 0% → 100% | 0d → none |
| 34 | Arquitectura tecnológica formalizada | 2019-03-13 A | 2019-03-13 A | 0% → 100% | 0d → none |

## Version 9 (saved 2019-03-20, file 28_382_PDT_CON_P363_E302_03042019.mpp)

Note of the change: Se sube linea base para el nuevo repositorio

Last finish stays 2019-05-16.

Changed:

| ID | Task | Start | Complete | Total float |
| --- | --- | --- | --- | --- |
| 1 | **DyP_IPP - Mejoras al Módulo de descargas de acuses del IDE** |  | 23% → 34% |  |
| 35 | **Desarrollo** | 2019-03-14 A | 0% → 31% | 0d → 30.5d |
| 36 | **Desarrollar / parametrizar aplicación** | 2019-03-14 A | 0% → 50% |  |
| 37 | **Desarrollar artefactos de desarrollo** | 2019-03-14 A | 0% → 50% |  |
| 38 | Integrar Servicios - (Selladora, Envió Correo, Autentificación, Acceso y Encriptar Archivo) | 2019-03-14 A | 0% → 50% |  |
| 39 | Integrar Servicios - (Presentación Internet/Modulo, Recepción, Validación y Carga DWH) | 2019-03-14 A | 0% → 50% |  |
| 40 | Integrar Servicios - (Monitor, Monitor Servicios y Monitor DEC_IDE_Tradicional) | 2019-03-14 A | 0% → 50% |  |

## Version 10 (saved 2019-04-12, file 28_382_PDT_CON_P363_E611_10042019.mpp)

Note of the change: Se sube linea base para el nuevo repositorio

Last finish 2019-05-16 → 2019-07-05 (+50d). Complete tasks 24 → 30.

Added:

| ID | Task | Duration | Start | Finish | Predecessors | Constraint | Resources |
| --- | --- | --- | --- | --- | --- | --- | --- |
| 57 | DLCC19182D41 | 0d | 2019-04-30 | 2019-04-30 | 47 |  | Jaime Maldonado Báez |
| 58 | DLCC19182D41.dp | 0d | 2019-04-30 | 2019-04-30 | 47 |  | Jaime Maldonado Báez |
| 59 | DLCC19182D11 | 0d | 2019-04-30 | 2019-04-30 | 47 |  | Jaime Maldonado Báez |
| 60 | DLCC19182D11 | 0d | 2019-04-30 | 2019-04-30 | 47 |  | Jaime Maldonado Báez |
| 61 | DLCC19182D11.dp | 0d | 2019-04-30 | 2019-04-30 | 47 |  | Jaime Maldonado Báez |
| 62 | DLCC19182D21 | 0d | 2019-04-30 | 2019-04-30 | 47 |  | Jaime Maldonado Báez |
| 63 | DLCC19182D21 | 0d | 2019-04-30 | 2019-04-30 | 47 |  | Jaime Maldonado Báez |
| 64 | DLCC19182D21.dp | 0d | 2019-04-30 | 2019-04-30 | 47 |  | Jaime Maldonado Báez |
| 65 | DLCC19182D22 | 0d | 2019-04-30 | 2019-04-30 | 47 |  | Jaime Maldonado Báez |
| 66 | DLCC19182D22 | 0d | 2019-04-30 | 2019-04-30 | 47 |  | Jaime Maldonado Báez |
| 67 | DLCC19182D22.dp | 0d | 2019-04-30 | 2019-04-30 | 47 |  | Jaime Maldonado Báez |
| 68 | DLCC19182D12 | 0d | 2019-04-30 | 2019-04-30 | 47 |  | Jaime Maldonado Báez |
| 69 | DLCC19182D12 | 0d | 2019-04-30 | 2019-04-30 | 47 |  | Jaime Maldonado Báez |
| 70 | DLCC19182D12.dp | 0d | 2019-04-30 | 2019-04-30 | 47 |  | Jaime Maldonado Báez |
| 71 | DLCC19182D13 | 0d | 2019-04-30 | 2019-04-30 | 47 |  | Jaime Maldonado Báez |
| 72 | DLCC19182D13 | 0d | 2019-05-02 | 2019-05-02 | 47 | as late as possible | Jaime Maldonado Báez |

Changed:

| ID | Task | Start | Finish | Duration | Complete | Total float | Predecessors | Other |
| --- | --- | --- | --- | --- | --- | --- | --- | --- |
| 1 | **DyP_IPP - Mejoras al Módulo de descargas de acuses del IDE** |  | 2019-05-16 → 2019-07-05 (+50d) | 68.5d → 102d | 34% → 49% |  |  |  |
| 3 | Revisar Información de Insumos |  |  |  |  |  |  | resources Jaime Maldonado Báez; Jose Luis Domínguez López; Hermilo Martinez Gonzalez → Jaime Maldonado Báez; Angel Ramirez Mancera; Hermilo Martinez Gonzalez; Arturo Minguez Alcantara |
| 6 | Elaborar documentos de especificación funcional |  |  |  |  |  |  | resources Jose Luis Domínguez López [50%]; Hermilo Martinez Gonzalez [50%]; Jaime Maldonado Báez [75%] → Hermilo Martinez Gonzalez [86.6%]; Jaime Maldonado Báez [86.6%]; Manuel Francisco Muñoz Calvo [86.6%]; Angel Ramirez Mancera [86.6%] |
| 7 | Revisar documentación de la especificación funcional (Analista) |  |  |  |  |  |  | resources Mauricio Jiménez Rosales → Mauricio Jiménez Rosales; Arturo Minguez Alcantara |
| 22 | Revisar documentos de la arquitectura de la solución |  |  |  |  |  |  | resources Jaime Maldonado Báez → Jaime Maldonado Báez; Arturo Minguez Alcantara |
| 25 | Actualizar documentos de diseño |  |  |  |  |  |  | resources Jose Luis Domínguez López [25%]; Jaime Maldonado Báez [50%]; Hermilo Martinez Gonzalez [50%] → Hermilo Martinez Gonzalez [75%]; Angel Ramirez Mancera [75%]; Jaime Maldonado Báez [75%] |
| 26 | Revisar documentos de diseño (Analista) |  |  |  |  |  |  | resources Mauricio Jiménez Rosales → Mauricio Jiménez Rosales; Arturo Minguez Alcantara |
| 35 | **Desarrollo** |  | 2019-04-03 → 2019-05-02 (+29d) | 15d → 32d | 31% → 88% | 30.5d → 47d |  |  |
| 36 | **Desarrollar / parametrizar aplicación** |  | 2019-03-27 → 2019-03-29 A (+2d) | 10d → 12d | 50% → 100% | 0d → none |  |  |
| 37 | **Desarrollar artefactos de desarrollo** |  | 2019-03-27 → 2019-03-29 A (+2d) | 10d → 12d | 50% → 100% | 0d → none |  |  |
| 38 | Integrar Servicios - (Selladora, Envió Correo, Autentificación, Acceso y Encriptar Archivo) |  | 2019-03-27 → 2019-03-29 A (+2d) | 10d → 12d | 50% → 100% | 0d → none |  | resources Jaime Maldonado Báez → Jaime Maldonado Báez [94.8%]; Arturo Minguez Alcantara [94.8%] |
| 39 | Integrar Servicios - (Presentación Internet/Modulo, Recepción, Validación y Carga DWH) |  | 2019-03-27 → 2019-03-29 A (+2d) | 10d → 12d | 50% → 100% | 0d → none |  | resources Manuel Francisco Muñoz Calvo → Manuel Francisco Muñoz Calvo [94.8%]; Isaac Diaz Vargas [94.8%] |
| 40 | Integrar Servicios - (Monitor, Monitor Servicios y Monitor DEC_IDE_Tradicional) |  | 2019-03-27 → 2019-03-29 A (+2d) | 10d → 12d | 50% → 100% | 0d → none |  | resources Jose Luis Domínguez López → Angel Ramirez Mancera [94.8%]; Jose Manuel Aranda Diaz [94.8%] |
| 41 | Integrar código y versionamiento | 2019-03-21 → 2019-03-25 A (+4d) | 2019-03-27 → 2019-04-02 A (+6d) | 5d → 7d | 0% → 100% | 0d → none |  | resources Mauricio Jiménez Rosales → Mauricio Jiménez Rosales [89.3%]; Adiel Jacob Garcia Garcia [89.3%] |
| 42 | Elaborar estrategia, plan y casos prueba | 2019-03-21 → 2019-03-25 A (+4d) | 2019-03-27 → 2019-04-02 A (+6d) | 5d → 7d | 0% → 100% | 35.5d → none |  | resources Hermilo Martinez Gonzalez → Hermilo Martinez Gonzalez [89.3%]; Jose Luis Dominguez Lopez [89.3%] |
| 43 | Realizar pruebas unitarias | 2019-03-28 → 2019-04-03 A (+6d) | 2019-03-28 → 2019-04-10 A (+13d) | 1d → 6d | 0% → 100% | 0d → none |  | resources Jaime Maldonado Báez; Manuel Francisco Muñoz Calvo; Jose Luis Domínguez López → Jaime Maldonado Báez [69.4%]; Manuel Francisco Muñoz Calvo [69.4%]; Angel Ramirez Mancera [69.4%] |
| 44 | Realizar pruebas calidad de código | 2019-03-29 → 2019-04-10 (+12d) | 2019-03-29 → 2019-04-10 (+12d) | 1d → 0d |  |  |  | resources Jaime Maldonado Báez; Manuel Francisco Muñoz Calvo; Jose Luis Domínguez López → none |
| 45 | Realizar pruebas funcionales de la aplicación | 2019-04-01 → 2019-04-11 (+10d) | 2019-04-03 → 2019-04-22 (+19d) | 3d → 6d |  | 30.5d → 0d |  | resources Jaime Maldonado Báez; Manuel Francisco Muñoz Calvo [50%]; Jose Luis Domínguez López → Jaime Maldonado Báez [83.3%]; Manuel Francisco Muñoz Calvo [41.7%]; Angel Ramirez Mancera [83.3%] |
| 46 | Realizar pruebas de vulnerabilidad (ambiente desarrollo 50%) | 2019-04-01 → 2019-04-22 (+21d) | 2019-04-03 → 2019-04-22 (+19d) | 3d → 0d |  |  | 44 → 45 | resources Hermilo Martinez Gonzalez; Saúl Juárez Gutierrez → none |
| 47 | Generar y entregar paquete aplicativo a la AVL | 2019-04-03 → 2019-04-22 (+19d) | 2019-04-03 → 2019-04-23 (+20d) | 1d → 2d |  |  |  |  |
| 48 | **Entregables** | 2019-04-03 → 2019-04-23 (+20d) | 2019-04-03 → 2019-05-02 (+29d) | 0d → 5d |  | 30.5d → 0d |  |  |
| 49 | Reporte de pruebas unitarias | 2019-04-03 → 2019-04-23 (+20d) | 2019-04-03 → 2019-04-23 (+20d) |  |  | 30.5d → 52d |  |  |
| 50 | Reporte de pruebas de calidad de código | 2019-04-03 → 2019-04-23 (+20d) | 2019-04-03 → 2019-04-23 (+20d) |  |  | 30.5d → 52d |  |  |
| 51 | Reporte de pruebas de vulnerabilidad (50% desarrollo) | 2019-04-03 → 2019-04-23 (+20d) | 2019-04-03 → 2019-04-23 (+20d) |  |  | 30.5d → 0d |  |  |
| 52 | **Paquete (s)** | 2019-04-03 → 2019-04-30 (+27d) | 2019-04-03 → 2019-05-02 (+29d) |  |  | 30.5d → 0d | none → 51FS+5d |  |
| 53 | DLCC19182D31 | 2019-04-03 → 2019-04-30 (+27d) | 2019-04-03 → 2019-04-30 (+27d) |  |  | 30.5d → 0d |  | was named 28_382_MAC_IDEWEB |
| 54 | DLCC19182D31 | 2019-04-03 → 2019-04-30 (+27d) | 2019-04-03 → 2019-04-30 (+27d) |  |  | 30.5d → 0d |  | was named 28_382_MAI_IDEWEB |
| 55 | DLCC19182D31.dp | 2019-04-03 → 2019-04-30 (+27d) | 2019-04-03 → 2019-04-30 (+27d) |  |  | 30.5d → 0d |  | was named DLCC19101DE1.dp |
| 56 | DLCC19182D41 | 2019-04-03 → 2019-04-30 (+27d) | 2019-04-03 → 2019-04-30 (+27d) |  |  | 30.5d → 0d |  | was named DLCC19101DE1 |
| 73 | DLCC19182D13.dp | 2019-04-03 → 2019-04-30 (+27d) | 2019-04-03 → 2019-04-30 (+27d) |  |  | 30.5d → 0d |  | was named DLCC19101DE1 |
| 74 | **Pruebas** | 2019-04-04 → 2019-04-24 (+20d) | 2019-04-24 → 2019-06-14 (+51d) | 15d → 36d |  | 0d → 4d |  |  |
| 75 | Ambientación integración y UAT | 2019-04-04 → 2019-04-24 (+20d) | 2019-04-04 → 2019-04-24 (+20d) |  |  | 29.5d → 51d |  |  |
| 76 | Seguridad identidades integración y UAT | 2019-04-04 → 2019-04-24 (+20d) | 2019-04-04 → 2019-04-24 (+20d) |  |  | 29.5d → 51d |  |  |
| 77 | **Pruebas de integración aplicativa** | 2019-04-04 → 2019-05-02 (+28d) | 2019-04-10 → 2019-05-24 (+44d) | 5d → 17d |  |  |  |  |
| 78 | Compilar, armar e instalar solución aplicativa | 2019-04-04 → 2019-05-02 (+28d) | 2019-04-04 → 2019-05-02 (+28d) |  |  | 29.5d → 46d | 47 → 52 |  |
| 79 | Acompañamiento a compilar, armar e instalar solución aplicativa | 2019-04-04 → 2019-05-02 (+28d) | 2019-04-04 → 2019-05-07 (+33d) | 1d → 4d |  |  | 47 → 52 | resources Manuel Francisco Muñoz Calvo [50%]; Jaime Maldonado Báez [50%] → Manuel Francisco Muñoz Calvo; Jaime Maldonado Báez |
| 80 | Aplicación instalada en ambiente de integración | 2019-04-04 → 2019-05-07 (+33d) | 2019-04-04 → 2019-05-07 (+33d) |  |  | 29.5d → 43d |  |  |
| 81 | Ejecutar pruebas de integración aplicativa | 2019-04-05 → 2019-05-08 (+33d) | 2019-04-09 → 2019-05-20 (+41d) | 2.5d → 9d |  |  |  | resources Manuel Francisco Muñoz Calvo [50%]; Jose Luis Domínguez López [50%] → Manuel Francisco Muñoz Calvo [83.3%]; Angel Ramirez Mancera [83.3%] |
| 82 | Realizar pruebas de vulnerabilidad (ambiente integración 75%) | 2019-04-05 → 2019-05-07 (+32d) | 2019-04-09 → 2019-05-07 (+28d) | 2.5d → 0d |  | 26.5d → 42.5d |  | resources Hermilo Martinez Gonzalez [50%]; Jaime Maldonado Báez [50%] → none |
| 83 | Atención a la iniciativa para la solución aplicativa | 2019-04-05 → 2019-05-06 (+31d) | 2019-04-09 → 2019-05-08 (+29d) |  |  | 26.5d → 42.5d |  |  |
| 84 | Reporte de prueba de integración aplicativa | 2019-04-10 → 2019-05-21 (+41d) | 2019-04-10 → 2019-05-21 (+41d) |  |  | 26d → 33d |  |  |
| 85 | Actualizar paquete aplicativo a la AVL | 2019-04-10 → 2019-05-22 (+42d) | 2019-04-10 → 2019-05-24 (+44d) | 0.5d → 3d |  |  |  | resources Alejandra Ubaldo Santiago; Saúl Juárez Gutierrez; Hermilo Martinez Gonzalez → Alejandra Ubaldo Santiago [68.2%]; Saúl Juárez Gutierrez [68.2%]; Hermilo Martinez Gonzalez [68.2%]; Angel Ramirez Mancera [58.5%]; Arturo Minguez Alcantara [70.2%] |
| 86 | **Pruebas de usuario** | 2019-04-11 → 2019-05-27 (+46d) | 2019-04-17 → 2019-06-14 (+58d) | 5d → 15d |  |  |  |  |
| 87 | Compilar, Armar e Instalar solución aplicativa - ambiente de pruebas de usuario | 2019-04-11 → 2019-05-27 (+46d) | 2019-04-11 → 2019-05-27 (+46d) |  |  |  |  |  |
| 88 | Acompañar instalación solución aplicativa - ambiente de pruebas de usuario | 2019-04-11 → 2019-05-27 (+46d) | 2019-04-11 → 2019-06-05 (+55d) | 1d → 8d |  | 24.5d → 22d |  | resources Manuel Francisco Muñoz Calvo [50%]; Jaime Maldonado Báez [50%] → Efrain Tapia Puebla [78.1%]; Jose Luis Valtierra Pizano [78.1%] |
| 89 | Aplicación instalada en ambiente de pruebas de usuario | 2019-04-11 → 2019-05-27 (+46d) | 2019-04-11 → 2019-05-27 (+46d) |  |  |  |  |  |
| 90 | Validar solución aplicativa instalada en ambiente de UAT | 2019-04-12 → 2019-05-28 (+46d) | 2019-04-12 → 2019-05-28 (+46d) |  |  |  |  |  |
| 91 | Coordinar las pruebas de aceptación del usuario | 2019-04-12 → 2019-05-28 (+46d) | 2019-04-12 → 2019-05-28 (+46d) |  |  |  |  |  |
| 92 | Ejecutar pruebas de usuario de la solución completa | 2019-04-15 → 2019-05-29 (+44d) | 2019-04-17 → 2019-05-31 (+44d) |  |  |  |  |  |
| 93 | Acompañar pruebas de usuario y atender hallazgos/defectos en la aplicación | 2019-04-15 → 2019-05-29 (+44d) | 2019-04-17 → 2019-06-14 (+58d) | 3d → 13d |  | 20.5d → 15d |  | resources Manuel Francisco Muñoz Calvo; Jose Luis Domínguez López; Jaime Maldonado Báez → Wendy Fabiola Ruiz Nieto; Daniel Abraham Sanchez Cardenas; Cristian Adolfo Rojo Delgado |
| 94 | Registrar hallazgos / defectos | 2019-04-15 → 2019-05-29 (+44d) | 2019-04-17 → 2019-05-31 (+44d) |  |  | 20.5d → 25d |  |  |
| 95 | Atender incidentes en ambientes | 2019-04-15 → 2019-05-29 (+44d) | 2019-04-17 → 2019-05-31 (+44d) |  |  |  |  |  |
| 96 | Validar defectos ajustados | 2019-04-17 → 2019-05-31 (+44d) | 2019-04-17 → 2019-05-31 (+44d) |  |  |  |  |  |
| 97 | Elaborar Oficio de Aceptación de Pruebas de Usuario y Liberación | 2019-04-17 → 2019-05-31 (+44d) | 2019-04-17 → 2019-05-31 (+44d) |  |  |  |  |  |
| 98 | Oficio de Aceptación de Pruebas de Usuario y Liberación | 2019-04-17 → 2019-05-31 (+44d) | 2019-04-17 → 2019-05-31 (+44d) |  |  |  |  |  |
| 99 | Ambientación de estrés y producción | 2019-04-17 → 2019-05-31 (+44d) | 2019-04-17 → 2019-05-31 (+44d) |  |  | 20.5d → 25d |  |  |
| 100 | Seguridad identidades estrés y producción | 2019-04-17 → 2019-05-31 (+44d) | 2019-04-17 → 2019-05-31 (+44d) |  |  | 20.5d → 25d |  |  |
| 101 | **Pruebas de vulnerabilidad** | 2019-04-18 → 2019-05-31 (+43d) | 2019-04-24 → 2019-06-04 (+41d) | 5d → 2d |  |  |  |  |
| 102 | Ejecutar pruebas de vulnerabilidad | 2019-04-18 → 2019-05-31 (+43d) | 2019-04-22 → 2019-05-31 (+39d) | 3d → 0d |  |  |  | resources Jaime Maldonado Báez; Saúl Juárez Gutierrez; Manuel Francisco Muñoz Calvo → none |
| 103 | Informar los hallazgos | 2019-04-23 → 2019-05-31 (+38d) | 2019-04-23 → 2019-05-31 (+38d) | 1d → 0d |  | 0d → 2d |  | resources Jaime Maldonado Báez; Saúl Juárez Gutierrez; Manuel Francisco Muñoz Calvo → none |
| 104 | Atender hallazgos | 2019-04-24 → 2019-05-31 (+37d) | 2019-04-24 → 2019-05-31 (+37d) | 1d → 0d |  | 0d → 2d |  | resources Jaime Maldonado Báez; Saúl Juárez Gutierrez; Manuel Francisco Muñoz Calvo → none |
| 105 | Certificar la seguridad de información | 2019-04-23 → 2019-06-03 (+41d) | 2019-04-24 → 2019-06-04 (+41d) |  |  |  |  |  |
| 106 | Reporte de pruebas de vulnerabilidad | 2019-04-24 → 2019-06-04 (+41d) | 2019-04-24 → 2019-06-04 (+41d) |  |  |  |  |  |
| 107 | Certificado de no vulnerabilidades | 2019-04-24 → 2019-06-04 (+41d) | 2019-04-24 → 2019-06-04 (+41d) |  |  |  |  |  |
| 108 | **Pruebas de estrés** | 2019-04-18 → 2019-05-31 (+43d) | 2019-04-24 → 2019-06-03 (+40d) | 5d → 1.5d |  | 15.5d → 24.5d |  |  |
| 109 | Compilar, Armar e Instalar solución aplicativa - ambiente de estrés | 2019-04-18 → 2019-06-03 (+46d) | 2019-04-18 → 2019-06-03 (+46d) |  |  | 20d → 24.5d |  |  |
| 110 | Automatizar caso de prueba de estrés | 2019-04-18 → 2019-05-31 (+43d) | 2019-04-22 → 2019-05-31 (+39d) | 3d → 0d |  | 15.5d → 25d |  | resources Jose Luis Domínguez López; Hermilo Martinez Gonzalez → none |
| 111 | Ejecutar pruebas de estrés | 2019-04-23 → 2019-05-31 (+38d) | 2019-04-23 → 2019-05-31 (+38d) | 1d → 0d |  | 15.5d → 25d |  | resources Jose Luis Domínguez López; Hermilo Martinez Gonzalez → none |
| 112 | Informar los hallazgos | 2019-04-24 → 2019-05-31 (+37d) | 2019-04-24 → 2019-05-31 (+37d) | 1d → 0d |  | 15.5d → 25d |  | resources Jose Luis Domínguez López; Hermilo Martinez Gonzalez → none |
| 113 | Atender hallazgos | 2019-04-24 → 2019-05-31 (+37d) | 2019-04-24 → 2019-05-31 (+37d) |  |  | 15.5d → 25d |  |  |

| ID | Task | Start | Finish | Duration | Total float | Other |
| --- | --- | --- | --- | --- | --- | --- |
| 114 | Formalizar informe de pruebas de estrés | 2019-04-24 → 2019-05-31 (+37d) | 2019-04-24 → 2019-05-31 (+37d) |  | 15.5d → 25d |  |
| 115 | Reporte de pruebas de estrés | 2019-04-24 → 2019-05-31 (+37d) | 2019-04-24 → 2019-05-31 (+37d) |  | 15.5d → 25d |  |
| 116 | Informe de pruebas de estrés | 2019-04-24 → 2019-05-31 (+37d) | 2019-04-24 → 2019-05-31 (+37d) |  | 15.5d → 25d |  |
| 117 | **Acompañamiento a la implementación** | 2019-04-25 → 2019-06-05 (+41d) | 2019-05-08 → 2019-06-27 (+50d) | 9.5d → 17d |  |  |
| 118 | Realizar toma aplicativa | 2019-04-25 → 2019-06-05 (+41d) | 2019-04-25 → 2019-06-05 (+41d) |  |  | resources Jorge Alberto de Flón González [25%]; Administrador ACOST [25%] → Ignacio Ruiz Casillas [25%]; Administrador ACOST [25%] |
| 119 | Capacitar a Mesa de servicio (CDS) | 2019-04-25 → 2019-06-05 (+41d) | 2019-04-25 → 2019-06-05 (+41d) |  | 14.5d → 22d | resources Jaime Maldonado Báez → none |
| 120 | Capacitar a Mesa de servicio (RAPE) | 2019-04-25 → 2019-06-05 (+41d) | 2019-04-25 → 2019-06-05 (+41d) |  | 14.5d → 22d | resources Jorge Alberto de Flón González [50%] → Ignacio Ruiz Casillas [50%] |
| 121 | Instalar solución aplicativa - ambiente de producción | 2019-04-25 → 2019-06-05 (+41d) | 2019-04-26 → 2019-06-06 (+41d) |  |  |  |
| 122 | Acompañar en la implementación solución aplicativa - ambiente de producción | 2019-04-25 → 2019-06-05 (+41d) | 2019-04-26 → 2019-06-11 (+46d) | 1d → 4d | 14d → 18.5d | resources Jaime Maldonado Báez → Angel Ramirez Mancera |
| 123 | Informar de la puesta en producción | 2019-04-26 → 2019-06-06 (+41d) | 2019-04-26 → 2019-06-06 (+41d) |  |  |  |
| 124 | Dar seguimiento al periodo de estabilización | 2019-04-29 → 2019-06-07 (+39d) | 2019-05-08 → 2019-06-27 (+50d) | 7.5d → 15d |  | resources Jaime Maldonado Báez; Saúl Juárez Gutierrez → Arturo Minguez Alcantara; Saúl Juárez Gutierrez [96.2%] |
| 125 | Aplicación instalada en ambiente de producción | 2019-04-26 → 2019-06-06 (+41d) | 2019-04-26 → 2019-06-06 (+41d) |  | 14d → 21.5d |  |
| 126 | **Cierre** | 2019-05-08 → 2019-06-28 (+51d) | 2019-05-16 → 2019-07-05 (+50d) |  |  |  |
| 127 | Cerrar proyecto | 2019-05-08 → 2019-06-28 (+51d) | 2019-05-16 → 2019-07-05 (+50d) |  |  |  |
| 128 | Proyecto cerrado | 2019-05-16 → 2019-07-05 (+50d) | 2019-05-16 → 2019-07-05 (+50d) |  |  |  |

## Version 11 (saved 2019-04-17, file 28_382_PDT_CON_P363_E611_17042019.mpp)

Note of the change: Se sube linea base para el nuevo repositorio

Last finish stays 2019-07-05. Complete tasks 30 → 31.

Changed:

| ID | Task | Start | Finish | Complete | Total float | Other |
| --- | --- | --- | --- | --- | --- | --- |
| 1 | **DyP_IPP - Mejoras al Módulo de descargas de acuses del IDE** |  |  | 49% → 50% |  |  |
| 3 | Revisar Información de Insumos |  |  |  |  | resources Jaime Maldonado Báez; Angel Ramirez Mancera; Hermilo Martinez Gonzalez; Arturo Minguez Alcantara → Jaime Maldonado Báez; Ángel Ramírez Mancera; Hermilo Martínez González; Arturo Mínguez Alcántara |
| 6 | Elaborar documentos de especificación funcional |  |  |  |  | resources Hermilo Martinez Gonzalez [86.6%]; Jaime Maldonado Báez [86.6%]; Manuel Francisco Muñoz Calvo [86.6%]; Angel Ramirez Mancera [86.6%] → Hermilo Martínez González [86.6%]; Jaime Maldonado Báez [86.6%]; Manuel Francisco Muñoz Calvo [86.6%]; Ángel Ramírez Mancera [86.6%] |
| 7 | Revisar documentación de la especificación funcional (Analista) |  |  |  |  | resources Mauricio Jiménez Rosales; Arturo Minguez Alcantara → Mauricio Jiménez Rosales; Arturo Mínguez Alcántara |
| 22 | Revisar documentos de la arquitectura de la solución |  |  |  |  | resources Jaime Maldonado Báez; Arturo Minguez Alcantara → Jaime Maldonado Báez; Arturo Mínguez Alcántara |
| 25 | Actualizar documentos de diseño |  |  |  |  | resources Hermilo Martinez Gonzalez [75%]; Angel Ramirez Mancera [75%]; Jaime Maldonado Báez [75%] → Hermilo Martínez González [75%]; Ángel Ramírez Mancera [75%]; Jaime Maldonado Báez [75%] |
| 26 | Revisar documentos de diseño (Analista) |  |  |  |  | resources Mauricio Jiménez Rosales; Arturo Minguez Alcantara → Mauricio Jiménez Rosales; Arturo Mínguez Alcántara |
| 35 | **Desarrollo** |  | 2019-05-02 → 2019-04-30 (-2d) | 88% → 92% |  |  |
| 38 | Integrar Servicios - (Selladora, Envió Correo, Autentificación, Acceso y Encriptar Archivo) |  |  |  |  | resources Jaime Maldonado Báez [94.8%]; Arturo Minguez Alcantara [94.8%] → Jaime Maldonado Báez [94.8%]; Arturo Mínguez Alcántara [94.8%] |
| 39 | Integrar Servicios - (Presentación Internet/Modulo, Recepción, Validación y Carga DWH) |  |  |  |  | resources Manuel Francisco Muñoz Calvo [94.8%]; Isaac Diaz Vargas [94.8%] → Manuel Francisco Muñoz Calvo [94.8%]; Isaac Díaz Vargas [94.8%] |
| 40 | Integrar Servicios - (Monitor, Monitor Servicios y Monitor DEC_IDE_Tradicional) |  |  |  |  | resources Angel Ramirez Mancera [94.8%]; Jose Manuel Aranda Diaz [94.8%] → Ángel Ramírez Mancera [94.8%]; José Manuel Aranda Diaz [94.8%] |
| 41 | Integrar código y versionamiento |  |  |  |  | resources Mauricio Jiménez Rosales [89.3%]; Adiel Jacob Garcia Garcia [89.3%] → Mauricio Jiménez Rosales [89.3%]; Adiel Jacob García García [89.3%] |
| 42 | Elaborar estrategia, plan y casos prueba |  |  |  |  | resources Hermilo Martinez Gonzalez [89.3%]; Jose Luis Dominguez Lopez [89.3%] → Hermilo Martínez González [89.3%]; José Luis Domínguez López [89.3%] |
| 43 | Realizar pruebas unitarias |  |  |  |  | resources Jaime Maldonado Báez [69.4%]; Manuel Francisco Muñoz Calvo [69.4%]; Angel Ramirez Mancera [69.4%] → Jaime Maldonado Báez [69.4%]; Manuel Francisco Muñoz Calvo [69.4%]; Ángel Ramírez Mancera [69.4%] |
| 44 | Realizar pruebas calidad de código | 2019-04-10 A | 2019-04-10 A | 0% → 100% | 0d → none |  |
| 45 | Realizar pruebas funcionales de la aplicación | 2019-04-11 A |  | 0% → 50% |  | resources Jaime Maldonado Báez [83.3%]; Manuel Francisco Muñoz Calvo [41.7%]; Angel Ramirez Mancera [83.3%] → Jaime Maldonado Báez [83.3%]; Manuel Francisco Muñoz Calvo [41.7%]; Ángel Ramírez Mancera [83.3%] |
| 48 | **Entregables** |  | 2019-05-02 → 2019-04-30 (-2d) |  |  |  |
| 52 | **Paquete (s)** |  | 2019-05-02 → 2019-04-30 (-2d) |  |  |  |
| 72 | DLCC19182D13 | 2019-05-02 → 2019-04-30 (-2d) | 2019-05-02 → 2019-04-30 (-2d) |  |  | constraint as late as possible → finish no earlier than 2019-04-30 |
| 81 | Ejecutar pruebas de integración aplicativa |  |  |  |  | resources Manuel Francisco Muñoz Calvo [83.3%]; Angel Ramirez Mancera [83.3%] → Manuel Francisco Muñoz Calvo [83.3%]; Ángel Ramírez Mancera [83.3%] |
| 85 | Actualizar paquete aplicativo a la AVL |  |  |  |  | resources Alejandra Ubaldo Santiago [68.2%]; Saúl Juárez Gutierrez [68.2%]; Hermilo Martinez Gonzalez [68.2%]; Angel Ramirez Mancera [58.5%]; Arturo Minguez Alcantara [70.2%] → Alejandra Ubaldo Santiago [68.2%]; Saúl Juárez Gutierrez [68.2%]; Hermilo Martínez González [68.2%]; Ángel Ramírez Mancera [58.5%]; Arturo Mínguez Alcántara [70.2%] |
| 88 | Acompañar instalación solución aplicativa - ambiente de pruebas de usuario |  |  |  |  | resources Efrain Tapia Puebla [78.1%]; Jose Luis Valtierra Pizano [78.1%] → Efraín Tapia Puebla [78.1%]; José Luis Valtierra Pizano [78.1%] |
| 93 | Acompañar pruebas de usuario y atender hallazgos/defectos en la aplicación |  |  |  |  | resources Wendy Fabiola Ruiz Nieto; Daniel Abraham Sanchez Cardenas; Cristian Adolfo Rojo Delgado → Wendy Fabiola Ruiz Nieto; Daniel Abraham Sánchez Cárdenas; Cristian Adolfo Rojo Delgado |
| 122 | Acompañar en la implementación solución aplicativa - ambiente de producción |  |  |  |  | resources Angel Ramirez Mancera → Ángel Ramírez Mancera |
| 124 | Dar seguimiento al periodo de estabilización |  |  |  |  | resources Arturo Minguez Alcantara; Saúl Juárez Gutierrez [96.2%] → Arturo Mínguez Alcántara; Saúl Juárez Gutierrez [96.2%] |

## Version 12 (saved 2019-04-25, file 28_382_PDT_CON_P363_E611_24042019.mpp)

Note of the change: Se sube linea base para el nuevo repositorio

Last finish stays 2019-07-05. Complete tasks 31 → 33.

Changed:

| ID | Task | Start | Finish | Complete | Total float |
| --- | --- | --- | --- | --- | --- |
| 1 | **DyP_IPP - Mejoras al Módulo de descargas de acuses del IDE** |  |  | 50% → 53% |  |
| 35 | **Desarrollo** |  |  | 92% → 98% |  |
| 45 | Realizar pruebas funcionales de la aplicación |  |  | 50% → 80% | 0d → 53d |
| 46 | Realizar pruebas de vulnerabilidad (ambiente desarrollo 50%) | 2019-04-22 A | 2019-04-22 A | 0% → 100% | 0d → none |
| 47 | Generar y entregar paquete aplicativo a la AVL | 2019-04-22 A | 2019-04-23 A | 0% → 100% | 0d → none |

## Version 13 (saved 2019-05-10, file 28_382_PDT_CON_P363_E611.mpp)

Note of the change: Se sube linea base para el nuevo repositorio

Last finish 2019-07-05 → 2019-07-30 (+25d). Complete tasks 33 → 0.

Added:

| ID | Task | Duration | Start | Finish | Predecessors | Resources |
| --- | --- | --- | --- | --- | --- | --- |
| 74 | 28_382_MAC_IDEWEB | 0d | 2019-05-24 | 2019-05-24 | 47 | Jaime Maldonado Báez |
| 75 | 28_382_MAI_IDEWEB | 0d | 2019-05-24 | 2019-05-24 | 47 | Jaime Maldonado Báez |

Changed:

| ID | Task | Start | Finish | Duration | Complete | Total float | Predecessors | Other |
| --- | --- | --- | --- | --- | --- | --- | --- | --- |
| 1 | **DyP_IPP - Mejoras al Módulo de descargas de acuses del IDE** | 2019-02-11 A → 2019-02-11 | 2019-07-05 → 2019-07-30 (+25d) | 102d → 119d | 53% → 0% |  |  |  |
| 2 | **Análisis** | 2019-02-11 A → 2019-02-11 | 2019-03-07 A → 2019-03-07 |  | 100% → 0% | none → 0d |  |  |
| 3 | Revisar Información de Insumos | 2019-02-11 A → 2019-02-11 | 2019-02-11 A → 2019-02-11 |  | 100% → 0% | none → 0d |  |  |
| 4 | **Especificación Funcional** | 2019-02-12 A → 2019-02-12 | 2019-03-05 A → 2019-03-05 |  | 100% → 0% | none → 0d |  |  |
| 5 | **Documentar la especificación funcional** | 2019-02-12 A → 2019-02-12 | 2019-03-01 A → 2019-03-01 |  | 100% → 0% | none → 0d |  |  |
| 6 | Elaborar documentos de especificación funcional | 2019-02-12 A → 2019-02-12 | 2019-03-01 A → 2019-03-01 |  | 100% → 0% | none → 0d |  |  |
| 7 | Revisar documentación de la especificación funcional (Analista) | 2019-02-27 A → 2019-02-27 | 2019-03-01 A → 2019-03-01 |  | 100% → 0% | none → 104d |  |  |
| 8 | Revisar documentación de la especificación funcional (Soluciones de Negocio) | 2019-02-27 A → 2019-02-27 | 2019-03-05 A → 2019-03-05 |  | 100% → 0% | none → 0d |  |  |
| 9 | **Entregables** | 2019-03-07 A → 2019-03-07 | 2019-03-07 A → 2019-03-07 |  | 100% → 0% | none → 0d |  |  |
| 10 | 28_382_CRN | 2019-03-07 A → 2019-03-07 | 2019-03-07 A → 2019-03-07 |  | 100% → 0% | none → 0d |  |  |
| 11 | 28_382_CCV | 2019-03-07 A → 2019-03-07 | 2019-03-07 A → 2019-03-07 |  | 100% → 0% | none → 0d |  |  |
| 12 | 28_382_EIU_IDEWEB | 2019-03-07 A → 2019-03-07 | 2019-03-07 A → 2019-03-07 |  | 100% → 0% | none → 0d |  |  |
| 13 | 28_382_EZS | 2019-03-07 A → 2019-03-07 | 2019-03-07 A → 2019-03-07 |  | 100% → 0% | none → 0d |  |  |
| 14 | 28_382_ECU_IDEWEB | 2019-03-07 A → 2019-03-07 | 2019-03-07 A → 2019-03-07 |  | 100% → 0% | none → 0d |  |  |
| 15 | 28_382_MTB | 2019-03-07 A → 2019-03-07 | 2019-03-07 A → 2019-03-07 |  | 100% → 0% | none → 0d |  |  |
| 16 | 28_382_MCU | 2019-03-07 A → 2019-03-07 | 2019-03-07 A → 2019-03-07 |  | 100% → 0% | none → 0d |  |  |
| 17 | 28_382_RDP_IDEWEB | 2019-03-07 A → 2019-03-07 | 2019-03-07 A → 2019-03-07 |  | 100% → 0% | none → 0d |  |  |
| 18 | Formalizar documentación de la especificación funcional | 2019-03-07 A → 2019-03-07 | 2019-03-07 A → 2019-03-07 |  | 100% → 0% | none → 100d |  |  |
| 19 | Especificación funcional formalizada | 2019-03-07 A → 2019-03-07 | 2019-03-07 A → 2019-03-07 |  | 100% → 0% | none → 100d |  |  |
| 20 | **Diseño** | 2019-03-07 A → 2019-03-07 | 2019-03-13 A → 2019-03-13 |  | 100% → 0% | none → 0d |  |  |
| 21 | **Diseño de Arquitectura Tecnológica** | 2019-03-07 A → 2019-03-07 | 2019-03-13 A → 2019-03-13 |  | 100% → 0% | none → 0d |  |  |
| 22 | Revisar documentos de la arquitectura de la solución | 2019-03-07 A → 2019-03-07 | 2019-03-07 A → 2019-03-07 |  | 100% → 0% | none → 0d |  |  |
| 23 | **Diseño Aplicativo Detallado (MDAP)** | 2019-03-08 A → 2019-03-08 | 2019-03-13 A → 2019-03-13 |  | 100% → 0% | none → 0d |  |  |
| 24 | **Elaborar Documentos de Diseño** | 2019-03-08 A → 2019-03-08 | 2019-03-13 A → 2019-03-13 |  | 100% → 0% | none → 0d |  |  |
| 25 | Actualizar documentos de diseño | 2019-03-08 A → 2019-03-08 | 2019-03-13 A → 2019-03-13 |  | 100% → 0% | none → 0d |  |  |
| 26 | Revisar documentos de diseño (Analista) | 2019-03-13 A → 2019-03-13 | 2019-03-13 A → 2019-03-13 |  | 100% → 0% | none → 0d |  |  |
| 27 | Revisar documentación de la arquitectura tecnológica (ACTT) | 2019-03-13 A → 2019-03-13 | 2019-03-13 A → 2019-03-13 |  | 100% → 0% | none → 0d |  |  |
| 28 | **Entregables** | 2019-03-13 A → 2019-03-13 | 2019-03-13 A → 2019-03-13 |  | 100% → 0% | none → 0d |  |  |
| 29 | 28_382_RPP | 2019-03-13 A → 2019-03-13 | 2019-03-13 A → 2019-03-13 |  | 100% → 0% | none → 0d |  |  |
| 30 | 28_382_VBD | 2019-03-13 A → 2019-03-13 | 2019-03-13 A → 2019-03-13 |  | 100% → 0% | none → 0d |  |  |
| 31 | 28_382_DIC_IDEWEB | 2019-03-13 A → 2019-03-13 | 2019-03-13 A → 2019-03-13 |  | 100% → 0% | none → 0d |  |  |
| 32 | 28_382_MLF | 2019-03-13 A → 2019-03-13 | 2019-03-13 A → 2019-03-13 |  | 100% → 0% | none → 0d |  |  |
| 33 | Formalizar documentación de la arquitectura tecnológica | 2019-03-13 A → 2019-03-13 | 2019-03-13 A → 2019-03-13 |  | 100% → 0% | none → 0d |  |  |
| 34 | Arquitectura tecnológica formalizada | 2019-03-13 A → 2019-03-13 | 2019-03-13 A → 2019-03-13 |  | 100% → 0% | none → 0d |  |  |
| 35 | **Desarrollo** | 2019-03-14 A → 2019-03-14 | 2019-04-30 → 2019-05-24 (+24d) | 32d → 49d | 98% → 0% | 47d → 0d |  |  |
| 36 | **Desarrollar / parametrizar aplicación** | 2019-03-14 A → 2019-03-14 | 2019-03-29 A → 2019-03-29 |  | 100% → 0% | none → 0d |  |  |
| 37 | **Desarrollar artefactos de desarrollo** | 2019-03-14 A → 2019-03-14 | 2019-03-29 A → 2019-03-29 |  | 100% → 0% | none → 0d |  |  |
| 38 | Integrar Servicios - (Selladora, Envió Correo, Autentificación, Acceso y Encriptar Archivo) | 2019-03-14 A → 2019-03-14 | 2019-03-29 A → 2019-03-29 |  | 100% → 0% | none → 0d |  |  |
| 39 | Integrar Servicios - (Presentación Internet/Modulo, Recepción, Validación y Carga DWH) | 2019-03-14 A → 2019-03-14 | 2019-03-29 A → 2019-03-29 |  | 100% → 0% | none → 0d |  |  |
| 40 | Integrar Servicios - (Monitor, Monitor Servicios y Monitor DEC_IDE_Tradicional) | 2019-03-14 A → 2019-03-14 | 2019-03-29 A → 2019-03-29 |  | 100% → 0% | none → 0d |  |  |
| 41 | Integrar código y versionamiento | 2019-03-25 A → 2019-03-25 | 2019-04-02 A → 2019-04-02 |  | 100% → 0% | none → 0d |  |  |
| 42 | Elaborar estrategia, plan y casos prueba | 2019-03-25 A → 2019-03-25 | 2019-04-02 A → 2019-04-02 |  | 100% → 0% | none → 82d |  |  |
| 43 | Realizar pruebas unitarias | 2019-04-03 A → 2019-04-03 | 2019-04-10 A → 2019-04-10 |  | 100% → 0% | none → 0d |  |  |
| 44 | Realizar pruebas calidad de código | 2019-04-10 A → 2019-04-10 | 2019-04-10 A → 2019-04-10 |  | 100% → 0% | none → 0d |  |  |
| 45 | Realizar pruebas funcionales de la aplicación | 2019-04-11 A → 2019-04-11 |  |  | 80% → 0% | 53d → 0d |  |  |
| 46 | Realizar pruebas de vulnerabilidad (ambiente desarrollo 50%) | 2019-04-22 A → 2019-04-22 | 2019-04-22 A → 2019-04-22 |  | 100% → 0% | none → 0d |  |  |
| 47 | Generar y entregar paquete aplicativo a la AVL | 2019-04-22 A → 2019-04-22 | 2019-04-23 A → 2019-04-23 |  | 100% → 0% | none → 0d |  |  |
| 48 | **Entregables** |  | 2019-04-30 → 2019-05-24 (+24d) | 5d → 22d |  |  |  |  |
| 52 | **Paquete (s)** | 2019-04-30 → 2019-05-24 (+24d) | 2019-04-30 → 2019-05-24 (+24d) |  |  |  | 51FS+5d → 51FS+22d |  |
| 53 | DLCC19182D31 | 2019-04-30 → 2019-05-24 (+24d) | 2019-04-30 → 2019-05-24 (+24d) |  |  |  |  |  |
| 54 | DLCC19182D31 | 2019-04-30 → 2019-05-24 (+24d) | 2019-04-30 → 2019-05-24 (+24d) |  |  |  |  |  |
| 55 | DLCC19182D31.dp | 2019-04-30 → 2019-05-24 (+24d) | 2019-04-30 → 2019-05-24 (+24d) |  |  |  |  |  |
| 56 | DLCC19182D41 | 2019-04-30 → 2019-05-24 (+24d) | 2019-04-30 → 2019-05-24 (+24d) |  |  |  |  |  |
| 57 | DLCC19182D41 | 2019-04-30 → 2019-05-24 (+24d) | 2019-04-30 → 2019-05-24 (+24d) |  |  |  |  |  |
| 58 | DLCC19182D41.dp | 2019-04-30 → 2019-05-24 (+24d) | 2019-04-30 → 2019-05-24 (+24d) |  |  |  |  |  |
| 59 | DLCC19182D11 | 2019-04-30 → 2019-05-24 (+24d) | 2019-04-30 → 2019-05-24 (+24d) |  |  |  |  |  |
| 60 | DLCC19182D11 | 2019-04-30 → 2019-05-24 (+24d) | 2019-04-30 → 2019-05-24 (+24d) |  |  |  |  |  |
| 61 | DLCC19182D11.dp | 2019-04-30 → 2019-05-24 (+24d) | 2019-04-30 → 2019-05-24 (+24d) |  |  |  |  |  |
| 62 | DLCC19182D21 | 2019-04-30 → 2019-05-24 (+24d) | 2019-04-30 → 2019-05-24 (+24d) |  |  |  |  |  |
| 63 | DLCC19182D21 | 2019-04-30 → 2019-05-24 (+24d) | 2019-04-30 → 2019-05-24 (+24d) |  |  |  |  |  |
| 64 | DLCC19182D21.dp | 2019-04-30 → 2019-05-24 (+24d) | 2019-04-30 → 2019-05-24 (+24d) |  |  |  |  |  |
| 65 | DLCC19182D22 | 2019-04-30 → 2019-05-24 (+24d) | 2019-04-30 → 2019-05-24 (+24d) |  |  |  |  |  |
| 66 | DLCC19182D22 | 2019-04-30 → 2019-05-24 (+24d) | 2019-04-30 → 2019-05-24 (+24d) |  |  |  |  |  |
| 67 | DLCC19182D22.dp | 2019-04-30 → 2019-05-24 (+24d) | 2019-04-30 → 2019-05-24 (+24d) |  |  |  |  |  |
| 68 | DLCC19182D12 | 2019-04-30 → 2019-05-24 (+24d) | 2019-04-30 → 2019-05-24 (+24d) |  |  |  |  |  |
| 69 | DLCC19182D12 | 2019-04-30 → 2019-05-24 (+24d) | 2019-04-30 → 2019-05-24 (+24d) |  |  |  |  |  |
| 70 | DLCC19182D12.dp | 2019-04-30 → 2019-05-24 (+24d) | 2019-04-30 → 2019-05-24 (+24d) |  |  |  |  |  |
| 71 | DLCC19182D13 | 2019-04-30 → 2019-05-24 (+24d) | 2019-04-30 → 2019-05-24 (+24d) |  |  |  |  |  |
| 72 | DLCC19182D13 | 2019-04-30 → 2019-05-24 (+24d) | 2019-04-30 → 2019-05-24 (+24d) |  |  |  |  | constraint finish no earlier than 2019-04-30 → none |
| 73 | DLCC19182D13.dp | 2019-04-30 → 2019-05-24 (+24d) | 2019-04-30 → 2019-05-24 (+24d) |  |  |  |  |  |

| ID | Task | Start | Finish | Duration | Total float |
| --- | --- | --- | --- | --- | --- |
| 76 | **Pruebas** |  | 2019-06-14 → 2019-07-09 (+25d) | 36d → 53d | 4d → 15d |
| 79 | **Pruebas de integración aplicativa** | 2019-05-02 → 2019-05-27 (+25d) | 2019-05-24 → 2019-06-18 (+25d) |  |  |
| 80 | Compilar, armar e instalar solución aplicativa | 2019-05-02 → 2019-05-27 (+25d) | 2019-05-02 → 2019-05-27 (+25d) |  |  |
| 81 | Acompañamiento a compilar, armar e instalar solución aplicativa | 2019-05-02 → 2019-05-27 (+25d) | 2019-05-07 → 2019-05-30 (+23d) |  |  |
| 82 | Aplicación instalada en ambiente de integración | 2019-05-07 → 2019-05-30 (+23d) | 2019-05-07 → 2019-05-30 (+23d) |  |  |
| 83 | Ejecutar pruebas de integración aplicativa | 2019-05-08 → 2019-05-31 (+23d) | 2019-05-20 → 2019-06-12 (+23d) |  |  |
| 84 | Realizar pruebas de vulnerabilidad (ambiente integración 75%) | 2019-05-07 → 2019-05-30 (+23d) | 2019-05-07 → 2019-05-30 (+23d) |  |  |
| 85 | Atención a la iniciativa para la solución aplicativa | 2019-05-06 → 2019-05-29 (+23d) | 2019-05-08 → 2019-05-31 (+23d) |  |  |
| 86 | Reporte de prueba de integración aplicativa | 2019-05-21 → 2019-06-13 (+23d) | 2019-05-21 → 2019-06-13 (+23d) |  |  |
| 87 | Actualizar paquete aplicativo a la AVL | 2019-05-22 → 2019-06-14 (+23d) | 2019-05-24 → 2019-06-18 (+25d) |  |  |
| 88 | **Pruebas de usuario** | 2019-05-27 → 2019-06-19 (+23d) | 2019-06-14 → 2019-07-09 (+25d) |  |  |
| 89 | Compilar, Armar e Instalar solución aplicativa - ambiente de pruebas de usuario | 2019-05-27 → 2019-06-19 (+23d) | 2019-05-27 → 2019-06-19 (+23d) |  |  |
| 90 | Acompañar instalación solución aplicativa - ambiente de pruebas de usuario | 2019-05-27 → 2019-06-19 (+23d) | 2019-06-05 → 2019-06-28 (+23d) |  |  |
| 91 | Aplicación instalada en ambiente de pruebas de usuario | 2019-05-27 → 2019-06-19 (+23d) | 2019-05-27 → 2019-06-19 (+23d) |  |  |
| 92 | Validar solución aplicativa instalada en ambiente de UAT | 2019-05-28 → 2019-06-20 (+23d) | 2019-05-28 → 2019-06-20 (+23d) |  |  |
| 93 | Coordinar las pruebas de aceptación del usuario | 2019-05-28 → 2019-06-20 (+23d) | 2019-05-28 → 2019-06-20 (+23d) |  |  |
| 94 | Ejecutar pruebas de usuario de la solución completa | 2019-05-29 → 2019-06-21 (+23d) | 2019-05-31 → 2019-06-25 (+25d) |  |  |
| 95 | Acompañar pruebas de usuario y atender hallazgos/defectos en la aplicación | 2019-05-29 → 2019-06-21 (+23d) | 2019-06-14 → 2019-07-09 (+25d) |  |  |
| 96 | Registrar hallazgos / defectos | 2019-05-29 → 2019-06-21 (+23d) | 2019-05-31 → 2019-06-25 (+25d) |  |  |
| 97 | Atender incidentes en ambientes | 2019-05-29 → 2019-06-21 (+23d) | 2019-05-31 → 2019-06-25 (+25d) |  |  |
| 98 | Validar defectos ajustados | 2019-05-31 → 2019-06-25 (+25d) | 2019-05-31 → 2019-06-25 (+25d) |  |  |
| 99 | Elaborar Oficio de Aceptación de Pruebas de Usuario y Liberación | 2019-05-31 → 2019-06-25 (+25d) | 2019-05-31 → 2019-06-25 (+25d) |  |  |
| 100 | Oficio de Aceptación de Pruebas de Usuario y Liberación | 2019-05-31 → 2019-06-25 (+25d) | 2019-05-31 → 2019-06-25 (+25d) |  |  |
| 101 | Ambientación de estrés y producción | 2019-05-31 → 2019-06-25 (+25d) | 2019-05-31 → 2019-06-25 (+25d) |  |  |
| 102 | Seguridad identidades estrés y producción | 2019-05-31 → 2019-06-25 (+25d) | 2019-05-31 → 2019-06-25 (+25d) |  |  |
| 103 | **Pruebas de vulnerabilidad** | 2019-05-31 → 2019-06-25 (+25d) | 2019-06-04 → 2019-06-27 (+23d) |  |  |
| 104 | Ejecutar pruebas de vulnerabilidad | 2019-05-31 → 2019-06-25 (+25d) | 2019-05-31 → 2019-06-25 (+25d) |  |  |
| 105 | Informar los hallazgos | 2019-05-31 → 2019-06-25 (+25d) | 2019-05-31 → 2019-06-25 (+25d) |  |  |
| 106 | Atender hallazgos | 2019-05-31 → 2019-06-25 (+25d) | 2019-05-31 → 2019-06-25 (+25d) |  |  |
| 107 | Certificar la seguridad de información | 2019-06-03 → 2019-06-26 (+23d) | 2019-06-04 → 2019-06-27 (+23d) |  |  |
| 108 | Reporte de pruebas de vulnerabilidad | 2019-06-04 → 2019-06-27 (+23d) | 2019-06-04 → 2019-06-27 (+23d) |  |  |
| 109 | Certificado de no vulnerabilidades | 2019-06-04 → 2019-06-27 (+23d) | 2019-06-04 → 2019-06-27 (+23d) |  |  |
| 110 | **Pruebas de estrés** | 2019-05-31 → 2019-06-25 (+25d) | 2019-06-03 → 2019-06-26 (+23d) |  |  |
| 111 | Compilar, Armar e Instalar solución aplicativa - ambiente de estrés | 2019-06-03 → 2019-06-26 (+23d) | 2019-06-03 → 2019-06-26 (+23d) |  |  |
| 112 | Automatizar caso de prueba de estrés | 2019-05-31 → 2019-06-25 (+25d) | 2019-05-31 → 2019-06-25 (+25d) |  |  |
| 113 | Ejecutar pruebas de estrés | 2019-05-31 → 2019-06-25 (+25d) | 2019-05-31 → 2019-06-25 (+25d) |  |  |
| 114 | Informar los hallazgos | 2019-05-31 → 2019-06-25 (+25d) | 2019-05-31 → 2019-06-25 (+25d) |  |  |
| 115 | Atender hallazgos | 2019-05-31 → 2019-06-25 (+25d) | 2019-05-31 → 2019-06-25 (+25d) |  |  |
| 116 | Formalizar informe de pruebas de estrés | 2019-05-31 → 2019-06-25 (+25d) | 2019-05-31 → 2019-06-25 (+25d) |  |  |
| 117 | Reporte de pruebas de estrés | 2019-05-31 → 2019-06-25 (+25d) | 2019-05-31 → 2019-06-25 (+25d) |  |  |
| 118 | Informe de pruebas de estrés | 2019-05-31 → 2019-06-25 (+25d) | 2019-05-31 → 2019-06-25 (+25d) |  |  |
| 119 | **Acompañamiento a la implementación** | 2019-06-05 → 2019-06-28 (+23d) | 2019-06-27 → 2019-07-22 (+25d) |  |  |
| 120 | Realizar toma aplicativa | 2019-06-05 → 2019-06-28 (+23d) | 2019-06-05 → 2019-06-28 (+23d) |  |  |
| 121 | Capacitar a Mesa de servicio (CDS) | 2019-06-05 → 2019-06-28 (+23d) | 2019-06-05 → 2019-06-28 (+23d) |  |  |
| 122 | Capacitar a Mesa de servicio (RAPE) | 2019-06-05 → 2019-06-28 (+23d) | 2019-06-05 → 2019-06-28 (+23d) |  |  |
| 123 | Instalar solución aplicativa - ambiente de producción | 2019-06-05 → 2019-06-28 (+23d) | 2019-06-06 → 2019-07-01 (+25d) |  |  |
| 124 | Acompañar en la implementación solución aplicativa - ambiente de producción | 2019-06-05 → 2019-06-28 (+23d) | 2019-06-11 → 2019-07-04 (+23d) |  |  |
| 125 | Informar de la puesta en producción | 2019-06-06 → 2019-07-01 (+25d) | 2019-06-06 → 2019-07-01 (+25d) |  |  |
| 126 | Dar seguimiento al periodo de estabilización | 2019-06-07 → 2019-07-02 (+25d) | 2019-06-27 → 2019-07-22 (+25d) |  |  |
| 127 | Aplicación instalada en ambiente de producción | 2019-06-06 → 2019-07-01 (+25d) | 2019-06-06 → 2019-07-01 (+25d) |  |  |
| 128 | **Cierre** | 2019-06-28 → 2019-07-23 (+25d) | 2019-07-05 → 2019-07-30 (+25d) |  |  |
| 129 | Cerrar proyecto | 2019-06-28 → 2019-07-23 (+25d) | 2019-07-05 → 2019-07-30 (+25d) |  |  |
| 130 | Proyecto cerrado | 2019-07-05 → 2019-07-30 (+25d) | 2019-07-05 → 2019-07-30 (+25d) |  |  |

## Version 14 (saved 2019-05-16, file 28_382_PDT_CON_P363_E611_15052019.mpp)

Note of the change: Se sube linea base para el nuevo repositorio

Last finish stays 2019-07-30. Complete tasks 0 → 39.

Changed:

| ID | Task | Start | Finish | Complete | Total float |
| --- | --- | --- | --- | --- | --- |
| 1 | **DyP_IPP - Mejoras al Módulo de descargas de acuses del IDE** | 2019-02-11 A |  | 0% → 53% |  |
| 2 | **Análisis** | 2019-02-11 A | 2019-03-07 A | 0% → 100% | 0d → none |
| 3 | Revisar Información de Insumos | 2019-02-11 A | 2019-02-11 A | 0% → 100% | 0d → none |
| 4 | **Especificación Funcional** | 2019-02-12 A | 2019-03-05 A | 0% → 100% | 0d → none |
| 5 | **Documentar la especificación funcional** | 2019-02-12 A | 2019-03-01 A | 0% → 100% | 0d → none |
| 6 | Elaborar documentos de especificación funcional | 2019-02-12 A | 2019-03-01 A | 0% → 100% | 0d → none |
| 7 | Revisar documentación de la especificación funcional (Analista) | 2019-02-27 A | 2019-03-01 A | 0% → 100% | 104d → none |
| 8 | Revisar documentación de la especificación funcional (Soluciones de Negocio) | 2019-02-27 A | 2019-03-05 A | 0% → 100% | 0d → none |
| 9 | **Entregables** | 2019-03-07 A | 2019-03-07 A | 0% → 100% | 0d → none |
| 10 | 28_382_CRN | 2019-03-07 A | 2019-03-07 A | 0% → 100% | 0d → none |
| 11 | 28_382_CCV | 2019-03-07 A | 2019-03-07 A | 0% → 100% | 0d → none |
| 12 | 28_382_EIU_IDEWEB | 2019-03-07 A | 2019-03-07 A | 0% → 100% | 0d → none |
| 13 | 28_382_EZS | 2019-03-07 A | 2019-03-07 A | 0% → 100% | 0d → none |
| 14 | 28_382_ECU_IDEWEB | 2019-03-07 A | 2019-03-07 A | 0% → 100% | 0d → none |
| 15 | 28_382_MTB | 2019-03-07 A | 2019-03-07 A | 0% → 100% | 0d → none |
| 16 | 28_382_MCU | 2019-03-07 A | 2019-03-07 A | 0% → 100% | 0d → none |
| 17 | 28_382_RDP_IDEWEB | 2019-03-07 A | 2019-03-07 A | 0% → 100% | 0d → none |
| 18 | Formalizar documentación de la especificación funcional | 2019-03-07 A | 2019-03-07 A | 0% → 100% | 100d → none |
| 19 | Especificación funcional formalizada | 2019-03-07 A | 2019-03-07 A | 0% → 100% | 100d → none |
| 20 | **Diseño** | 2019-03-07 A | 2019-03-13 A | 0% → 100% | 0d → none |
| 21 | **Diseño de Arquitectura Tecnológica** | 2019-03-07 A | 2019-03-13 A | 0% → 100% | 0d → none |
| 22 | Revisar documentos de la arquitectura de la solución | 2019-03-07 A | 2019-03-07 A | 0% → 100% | 0d → none |
| 23 | **Diseño Aplicativo Detallado (MDAP)** | 2019-03-08 A | 2019-03-13 A | 0% → 100% | 0d → none |
| 24 | **Elaborar Documentos de Diseño** | 2019-03-08 A | 2019-03-13 A | 0% → 100% | 0d → none |
| 25 | Actualizar documentos de diseño | 2019-03-08 A | 2019-03-13 A | 0% → 100% | 0d → none |
| 26 | Revisar documentos de diseño (Analista) | 2019-03-13 A | 2019-03-13 A | 0% → 100% | 0d → none |
| 27 | Revisar documentación de la arquitectura tecnológica (ACTT) | 2019-03-13 A | 2019-03-13 A | 0% → 100% | 0d → none |
| 28 | **Entregables** | 2019-03-13 A | 2019-03-13 A | 0% → 100% | 0d → none |
| 29 | 28_382_RPP | 2019-03-13 A | 2019-03-13 A | 0% → 100% | 0d → none |
| 30 | 28_382_VBD | 2019-03-13 A | 2019-03-13 A | 0% → 100% | 0d → none |
| 31 | 28_382_DIC_IDEWEB | 2019-03-13 A | 2019-03-13 A | 0% → 100% | 0d → none |
| 32 | 28_382_MLF | 2019-03-13 A | 2019-03-13 A | 0% → 100% | 0d → none |
| 33 | Formalizar documentación de la arquitectura tecnológica | 2019-03-13 A | 2019-03-13 A | 0% → 100% | 0d → none |
| 34 | Arquitectura tecnológica formalizada | 2019-03-13 A | 2019-03-13 A | 0% → 100% | 0d → none |
| 35 | **Desarrollo** | 2019-03-14 A |  | 0% → 99% |  |
| 36 | **Desarrollar / parametrizar aplicación** | 2019-03-14 A | 2019-03-29 A | 0% → 100% | 0d → none |
| 37 | **Desarrollar artefactos de desarrollo** | 2019-03-14 A | 2019-03-29 A | 0% → 100% | 0d → none |
| 38 | Integrar Servicios - (Selladora, Envió Correo, Autentificación, Acceso y Encriptar Archivo) | 2019-03-14 A | 2019-03-29 A | 0% → 100% | 0d → none |
| 39 | Integrar Servicios - (Presentación Internet/Modulo, Recepción, Validación y Carga DWH) | 2019-03-14 A | 2019-03-29 A | 0% → 100% | 0d → none |
| 40 | Integrar Servicios - (Monitor, Monitor Servicios y Monitor DEC_IDE_Tradicional) | 2019-03-14 A | 2019-03-29 A | 0% → 100% | 0d → none |
| 41 | Integrar código y versionamiento | 2019-03-25 A | 2019-04-02 A | 0% → 100% | 0d → none |
| 42 | Elaborar estrategia, plan y casos prueba | 2019-03-25 A | 2019-04-02 A | 0% → 100% | 82d → none |
| 43 | Realizar pruebas unitarias | 2019-04-03 A | 2019-04-10 A | 0% → 100% | 0d → none |
| 44 | Realizar pruebas calidad de código | 2019-04-10 A | 2019-04-10 A | 0% → 100% | 0d → none |
| 45 | Realizar pruebas funcionales de la aplicación | 2019-04-11 A | 2019-04-22 A | 0% → 100% | 0d → none |
| 46 | Realizar pruebas de vulnerabilidad (ambiente desarrollo 50%) | 2019-04-22 A | 2019-04-22 A | 0% → 100% | 0d → none |
| 47 | Generar y entregar paquete aplicativo a la AVL | 2019-04-22 A | 2019-04-23 A | 0% → 100% | 0d → none |
| 48 | **Entregables** | 2019-04-23 A |  |  |  |
| 49 | Reporte de pruebas unitarias | 2019-04-23 A | 2019-04-23 A | 0% → 100% | 69d → none |
| 50 | Reporte de pruebas de calidad de código | 2019-04-23 A | 2019-04-23 A | 0% → 100% | 69d → none |
| 51 | Reporte de pruebas de vulnerabilidad (50% desarrollo) | 2019-04-23 A | 2019-04-23 A | 0% → 100% | 0d → none |
| 76 | **Pruebas** | 2019-04-24 A |  |  |  |
| 77 | Ambientación integración y UAT | 2019-04-24 A | 2019-04-24 A | 0% → 100% | 68d → none |
| 78 | Seguridad identidades integración y UAT | 2019-04-24 A | 2019-04-24 A | 0% → 100% | 68d → none |

## Version 15 (saved 2019-06-27, file 28_382_PDT_CON_P363_E611_26062019.mpp)

Note of the change: Se sube linea base para el nuevo repositorio

Last finish stays 2019-07-30. Complete tasks 39 → 74.

Changed:

| ID | Task | Start | Finish | Complete | Total float |
| --- | --- | --- | --- | --- | --- |
| 1 | **DyP_IPP - Mejoras al Módulo de descargas de acuses del IDE** |  |  | 53% → 70% |  |
| 35 | **Desarrollo** |  | 2019-05-24 A | 99% → 100% | 0d → none |
| 48 | **Entregables** |  | 2019-05-24 A | 0% → 100% | 0d → none |
| 52 | **Paquete (s)** | 2019-05-24 A | 2019-05-24 A | 0% → 100% | 0d → none |
| 53 | DLCC19182D31 | 2019-05-24 A | 2019-05-24 A | 0% → 100% | 0d → none |
| 54 | DLCC19182D31 | 2019-05-24 A | 2019-05-24 A | 0% → 100% | 0d → none |
| 55 | DLCC19182D31.dp | 2019-05-24 A | 2019-05-24 A | 0% → 100% | 0d → none |
| 56 | DLCC19182D41 | 2019-05-24 A | 2019-05-24 A | 0% → 100% | 0d → none |
| 57 | DLCC19182D41 | 2019-05-24 A | 2019-05-24 A | 0% → 100% | 0d → none |
| 58 | DLCC19182D41.dp | 2019-05-24 A | 2019-05-24 A | 0% → 100% | 0d → none |
| 59 | DLCC19182D11 | 2019-05-24 A | 2019-05-24 A | 0% → 100% | 0d → none |
| 60 | DLCC19182D11 | 2019-05-24 A | 2019-05-24 A | 0% → 100% | 0d → none |
| 61 | DLCC19182D11.dp | 2019-05-24 A | 2019-05-24 A | 0% → 100% | 0d → none |
| 62 | DLCC19182D21 | 2019-05-24 A | 2019-05-24 A | 0% → 100% | 0d → none |
| 63 | DLCC19182D21 | 2019-05-24 A | 2019-05-24 A | 0% → 100% | 0d → none |
| 64 | DLCC19182D21.dp | 2019-05-24 A | 2019-05-24 A | 0% → 100% | 0d → none |
| 65 | DLCC19182D22 | 2019-05-24 A | 2019-05-24 A | 0% → 100% | 0d → none |
| 66 | DLCC19182D22 | 2019-05-24 A | 2019-05-24 A | 0% → 100% | 0d → none |
| 67 | DLCC19182D22.dp | 2019-05-24 A | 2019-05-24 A | 0% → 100% | 0d → none |
| 68 | DLCC19182D12 | 2019-05-24 A | 2019-05-24 A | 0% → 100% | 0d → none |
| 69 | DLCC19182D12 | 2019-05-24 A | 2019-05-24 A | 0% → 100% | 0d → none |
| 70 | DLCC19182D12.dp | 2019-05-24 A | 2019-05-24 A | 0% → 100% | 0d → none |
| 71 | DLCC19182D13 | 2019-05-24 A | 2019-05-24 A | 0% → 100% | 0d → none |
| 72 | DLCC19182D13 | 2019-05-24 A | 2019-05-24 A | 0% → 100% | 0d → none |
| 73 | DLCC19182D13.dp | 2019-05-24 A | 2019-05-24 A | 0% → 100% | 0d → none |
| 74 | 28_382_MAC_IDEWEB | 2019-05-24 A | 2019-05-24 A | 0% → 100% | 0d → none |
| 75 | 28_382_MAI_IDEWEB | 2019-05-24 A | 2019-05-24 A | 0% → 100% | 0d → none |
| 76 | **Pruebas** |  |  | 0% → 54% |  |
| 79 | **Pruebas de integración aplicativa** | 2019-05-27 A | 2019-06-18 A | 0% → 100% | 0d → none |
| 80 | Compilar, armar e instalar solución aplicativa | 2019-05-27 A | 2019-05-27 A | 0% → 100% | 46d → none |
| 81 | Acompañamiento a compilar, armar e instalar solución aplicativa | 2019-05-27 A | 2019-05-30 A | 0% → 100% | 0d → none |
| 82 | Aplicación instalada en ambiente de integración | 2019-05-30 A | 2019-05-30 A | 0% → 100% | 43d → none |
| 83 | Ejecutar pruebas de integración aplicativa | 2019-05-31 A | 2019-06-12 A | 0% → 100% | 0d → none |
| 84 | Realizar pruebas de vulnerabilidad (ambiente integración 75%) | 2019-05-30 A | 2019-05-30 A | 0% → 100% | 42.5d → none |
| 85 | Atención a la iniciativa para la solución aplicativa | 2019-05-29 A | 2019-05-31 A | 0% → 100% | 42.5d → none |
| 86 | Reporte de prueba de integración aplicativa | 2019-06-13 A | 2019-06-13 A | 0% → 100% | 33d → none |
| 87 | Actualizar paquete aplicativo a la AVL | 2019-06-14 A | 2019-06-18 A | 0% → 100% | 0d → none |
| 88 | **Pruebas de usuario** | 2019-06-19 A |  | 0% → 34% | 0d → 15d |
| 89 | Compilar, Armar e Instalar solución aplicativa - ambiente de pruebas de usuario | 2019-06-19 A | 2019-06-19 A | 0% → 100% | 0d → none |
| 90 | Acompañar instalación solución aplicativa - ambiente de pruebas de usuario | 2019-06-19 A |  | 0% → 50% |  |
| 91 | Aplicación instalada en ambiente de pruebas de usuario | 2019-06-19 A | 2019-06-19 A | 0% → 100% | 0d → none |
| 92 | Validar solución aplicativa instalada en ambiente de UAT | 2019-06-20 A | 2019-06-20 A | 0% → 100% | 0d → none |
| 93 | Coordinar las pruebas de aceptación del usuario | 2019-06-20 A | 2019-06-20 A | 0% → 100% | 0d → none |
| 95 | Acompañar pruebas de usuario y atender hallazgos/defectos en la aplicación | 2019-06-21 A |  | 0% → 40% |  |

## Version 16 (data date 2019-07-24, saved 2019-07-24, file 28_382_PDT_CON_P363_E611_24072019.mpp)

Note of the change: Se sube linea base para el nuevo repositorio

Last finish stays 2019-07-30. Complete tasks 74 → 106.

Changed:

| ID | Task | Start | Finish | Complete | Total float |
| --- | --- | --- | --- | --- | --- |
| 1 | **DyP_IPP - Mejoras al Módulo de descargas de acuses del IDE** |  |  | 70% → 97% |  |
| 76 | **Pruebas** |  | 2019-07-09 A | 54% → 100% | 15d → none |
| 88 | **Pruebas de usuario** |  | 2019-07-09 A | 34% → 100% | 15d → none |
| 90 | Acompañar instalación solución aplicativa - ambiente de pruebas de usuario |  | 2019-06-28 A | 50% → 100% | 22d → none |
| 94 | Ejecutar pruebas de usuario de la solución completa | 2019-06-21 A | 2019-06-25 A | 0% → 100% | 0d → none |
| 95 | Acompañar pruebas de usuario y atender hallazgos/defectos en la aplicación |  | 2019-07-09 A | 40% → 100% | 15d → none |
| 96 | Registrar hallazgos / defectos | 2019-06-21 A | 2019-06-25 A | 0% → 100% | 25d → none |
| 97 | Atender incidentes en ambientes | 2019-06-21 A | 2019-06-25 A | 0% → 100% | 0d → none |
| 98 | Validar defectos ajustados | 2019-06-25 A | 2019-06-25 A | 0% → 100% | 0d → none |
| 99 | Elaborar Oficio de Aceptación de Pruebas de Usuario y Liberación | 2019-06-25 A | 2019-06-25 A | 0% → 100% | 0d → none |
| 100 | Oficio de Aceptación de Pruebas de Usuario y Liberación | 2019-06-25 A | 2019-06-25 A | 0% → 100% | 0d → none |
| 101 | Ambientación de estrés y producción | 2019-06-25 A | 2019-06-25 A | 0% → 100% | 25d → none |
| 102 | Seguridad identidades estrés y producción | 2019-06-25 A | 2019-06-25 A | 0% → 100% | 25d → none |
| 103 | **Pruebas de vulnerabilidad** | 2019-06-25 A | 2019-06-27 A | 0% → 100% | 0d → none |
| 104 | Ejecutar pruebas de vulnerabilidad | 2019-06-25 A | 2019-06-25 A | 0% → 100% | 0d → none |
| 105 | Informar los hallazgos | 2019-06-25 A | 2019-06-25 A | 0% → 100% | 2d → none |
| 106 | Atender hallazgos | 2019-06-25 A | 2019-06-25 A | 0% → 100% | 2d → none |
| 107 | Certificar la seguridad de información | 2019-06-26 A | 2019-06-27 A | 0% → 100% | 0d → none |
| 108 | Reporte de pruebas de vulnerabilidad | 2019-06-27 A | 2019-06-27 A | 0% → 100% | 0d → none |
| 109 | Certificado de no vulnerabilidades | 2019-06-27 A | 2019-06-27 A | 0% → 100% | 0d → none |
| 110 | **Pruebas de estrés** | 2019-06-25 A | 2019-06-26 A | 0% → 100% | 24.5d → none |
| 111 | Compilar, Armar e Instalar solución aplicativa - ambiente de estrés | 2019-06-26 A | 2019-06-26 A | 0% → 100% | 24.5d → none |
| 112 | Automatizar caso de prueba de estrés | 2019-06-25 A | 2019-06-25 A | 0% → 100% | 25d → none |
| 113 | Ejecutar pruebas de estrés | 2019-06-25 A | 2019-06-25 A | 0% → 100% | 25d → none |
| 114 | Informar los hallazgos | 2019-06-25 A | 2019-06-25 A | 0% → 100% | 25d → none |
| 115 | Atender hallazgos | 2019-06-25 A | 2019-06-25 A | 0% → 100% | 25d → none |
| 116 | Formalizar informe de pruebas de estrés | 2019-06-25 A | 2019-06-25 A | 0% → 100% | 25d → none |
| 117 | Reporte de pruebas de estrés | 2019-06-25 A | 2019-06-25 A | 0% → 100% | 25d → none |
| 118 | Informe de pruebas de estrés | 2019-06-25 A | 2019-06-25 A | 0% → 100% | 25d → none |
| 119 | **Acompañamiento a la implementación** | 2019-06-28 A | 2019-07-22 A | 0% → 100% | 0d → none |
| 120 | Realizar toma aplicativa | 2019-06-28 A | 2019-06-28 A | 0% → 100% | 0d → none |
| 121 | Capacitar a Mesa de servicio (CDS) | 2019-06-28 A | 2019-06-28 A | 0% → 100% | 22d → none |
| 122 | Capacitar a Mesa de servicio (RAPE) | 2019-06-28 A | 2019-06-28 A | 0% → 100% | 22d → none |
| 123 | Instalar solución aplicativa - ambiente de producción | 2019-06-28 A | 2019-07-01 A | 0% → 100% | 0d → none |
| 124 | Acompañar en la implementación solución aplicativa - ambiente de producción | 2019-06-28 A | 2019-07-04 A | 0% → 100% | 18.5d → none |
| 125 | Informar de la puesta en producción | 2019-07-01 A | 2019-07-01 A | 0% → 100% | 0d → none |
| 126 | Dar seguimiento al periodo de estabilización | 2019-07-02 A | 2019-07-22 A | 0% → 100% | 0d → none |
| 127 | Aplicación instalada en ambiente de producción | 2019-07-01 A | 2019-07-01 A | 0% → 100% | 21.5d → none |
| 128 | **Cierre** | 2019-07-23 A |  | 0% → 17% |  |
| 129 | Cerrar proyecto | 2019-07-23 A |  | 0% → 17% |  |

## Version 17 (data date 2019-07-17, saved 2019-07-31, file 28_382_PDT_CON_P363_E611_31072019.mpp)

Note of the change: Se sube linea base para el nuevo repositorio

Last finish stays 2019-07-30. Complete tasks 106 → 74.

Changed:

| ID | Task | Start | Finish | Complete | Total float |
| --- | --- | --- | --- | --- | --- |
| 1 | **DyP_IPP - Mejoras al Módulo de descargas de acuses del IDE** |  |  | 97% → 70% |  |
| 76 | **Pruebas** |  | 2019-07-09 A → 2019-07-09 | 100% → 54% | none → 15d |
| 88 | **Pruebas de usuario** |  | 2019-07-09 A → 2019-07-09 | 100% → 34% | none → 15d |
| 90 | Acompañar instalación solución aplicativa - ambiente de pruebas de usuario |  | 2019-06-28 A → 2019-06-28 | 100% → 50% | none → 22d |
| 94 | Ejecutar pruebas de usuario de la solución completa | 2019-06-21 A → 2019-06-21 | 2019-06-25 A → 2019-06-25 | 100% → 0% | none → 0d |
| 95 | Acompañar pruebas de usuario y atender hallazgos/defectos en la aplicación |  | 2019-07-09 A → 2019-07-09 | 100% → 40% | none → 15d |
| 96 | Registrar hallazgos / defectos | 2019-06-21 A → 2019-06-21 | 2019-06-25 A → 2019-06-25 | 100% → 0% | none → 25d |
| 97 | Atender incidentes en ambientes | 2019-06-21 A → 2019-06-21 | 2019-06-25 A → 2019-06-25 | 100% → 0% | none → 0d |
| 98 | Validar defectos ajustados | 2019-06-25 A → 2019-06-25 | 2019-06-25 A → 2019-06-25 | 100% → 0% | none → 0d |
| 99 | Elaborar Oficio de Aceptación de Pruebas de Usuario y Liberación | 2019-06-25 A → 2019-06-25 | 2019-06-25 A → 2019-06-25 | 100% → 0% | none → 0d |
| 100 | Oficio de Aceptación de Pruebas de Usuario y Liberación | 2019-06-25 A → 2019-06-25 | 2019-06-25 A → 2019-06-25 | 100% → 0% | none → 0d |
| 101 | Ambientación de estrés y producción | 2019-06-25 A → 2019-06-25 | 2019-06-25 A → 2019-06-25 | 100% → 0% | none → 25d |
| 102 | Seguridad identidades estrés y producción | 2019-06-25 A → 2019-06-25 | 2019-06-25 A → 2019-06-25 | 100% → 0% | none → 25d |
| 103 | **Pruebas de vulnerabilidad** | 2019-06-25 A → 2019-06-25 | 2019-06-27 A → 2019-06-27 | 100% → 0% | none → 0d |
| 104 | Ejecutar pruebas de vulnerabilidad | 2019-06-25 A → 2019-06-25 | 2019-06-25 A → 2019-06-25 | 100% → 0% | none → 0d |
| 105 | Informar los hallazgos | 2019-06-25 A → 2019-06-25 | 2019-06-25 A → 2019-06-25 | 100% → 0% | none → 2d |
| 106 | Atender hallazgos | 2019-06-25 A → 2019-06-25 | 2019-06-25 A → 2019-06-25 | 100% → 0% | none → 2d |
| 107 | Certificar la seguridad de información | 2019-06-26 A → 2019-06-26 | 2019-06-27 A → 2019-06-27 | 100% → 0% | none → 0d |
| 108 | Reporte de pruebas de vulnerabilidad | 2019-06-27 A → 2019-06-27 | 2019-06-27 A → 2019-06-27 | 100% → 0% | none → 0d |
| 109 | Certificado de no vulnerabilidades | 2019-06-27 A → 2019-06-27 | 2019-06-27 A → 2019-06-27 | 100% → 0% | none → 0d |
| 110 | **Pruebas de estrés** | 2019-06-25 A → 2019-06-25 | 2019-06-26 A → 2019-06-26 | 100% → 0% | none → 24.5d |
| 111 | Compilar, Armar e Instalar solución aplicativa - ambiente de estrés | 2019-06-26 A → 2019-06-26 | 2019-06-26 A → 2019-06-26 | 100% → 0% | none → 24.5d |
| 112 | Automatizar caso de prueba de estrés | 2019-06-25 A → 2019-06-25 | 2019-06-25 A → 2019-06-25 | 100% → 0% | none → 25d |
| 113 | Ejecutar pruebas de estrés | 2019-06-25 A → 2019-06-25 | 2019-06-25 A → 2019-06-25 | 100% → 0% | none → 25d |
| 114 | Informar los hallazgos | 2019-06-25 A → 2019-06-25 | 2019-06-25 A → 2019-06-25 | 100% → 0% | none → 25d |
| 115 | Atender hallazgos | 2019-06-25 A → 2019-06-25 | 2019-06-25 A → 2019-06-25 | 100% → 0% | none → 25d |
| 116 | Formalizar informe de pruebas de estrés | 2019-06-25 A → 2019-06-25 | 2019-06-25 A → 2019-06-25 | 100% → 0% | none → 25d |
| 117 | Reporte de pruebas de estrés | 2019-06-25 A → 2019-06-25 | 2019-06-25 A → 2019-06-25 | 100% → 0% | none → 25d |
| 118 | Informe de pruebas de estrés | 2019-06-25 A → 2019-06-25 | 2019-06-25 A → 2019-06-25 | 100% → 0% | none → 25d |
| 119 | **Acompañamiento a la implementación** | 2019-06-28 A → 2019-06-28 | 2019-07-22 A → 2019-07-22 | 100% → 0% | none → 0d |
| 120 | Realizar toma aplicativa | 2019-06-28 A → 2019-06-28 | 2019-06-28 A → 2019-06-28 | 100% → 0% | none → 0d |
| 121 | Capacitar a Mesa de servicio (CDS) | 2019-06-28 A → 2019-06-28 | 2019-06-28 A → 2019-06-28 | 100% → 0% | none → 22d |
| 122 | Capacitar a Mesa de servicio (RAPE) | 2019-06-28 A → 2019-06-28 | 2019-06-28 A → 2019-06-28 | 100% → 0% | none → 22d |
| 123 | Instalar solución aplicativa - ambiente de producción | 2019-06-28 A → 2019-06-28 | 2019-07-01 A → 2019-07-01 | 100% → 0% | none → 0d |
| 124 | Acompañar en la implementación solución aplicativa - ambiente de producción | 2019-06-28 A → 2019-06-28 | 2019-07-04 A → 2019-07-04 | 100% → 0% | none → 18.5d |
| 125 | Informar de la puesta en producción | 2019-07-01 A → 2019-07-01 | 2019-07-01 A → 2019-07-01 | 100% → 0% | none → 0d |
| 126 | Dar seguimiento al periodo de estabilización | 2019-07-02 A → 2019-07-02 | 2019-07-22 A → 2019-07-22 | 100% → 0% | none → 0d |
| 127 | Aplicación instalada en ambiente de producción | 2019-07-01 A → 2019-07-01 | 2019-07-01 A → 2019-07-01 | 100% → 0% | none → 21.5d |
| 128 | **Cierre** | 2019-07-23 A → 2019-07-23 |  | 17% → 0% |  |
| 129 | Cerrar proyecto | 2019-07-23 A → 2019-07-23 |  | 17% → 0% |  |

## Version 18 (data date 2019-12-19, saved 2019-12-19, file 28_382_PDT_CON_P363_E611_19122019.mpp)

Note of the change: Se sube linea base para el nuevo repositorio

Last finish stays 2019-07-30. Complete tasks 74 → 108.

Changed:

| ID | Task | Start | Finish | Complete | Total float |
| --- | --- | --- | --- | --- | --- |
| 1 | **DyP_IPP - Mejoras al Módulo de descargas de acuses del IDE** |  | 2019-07-30 A | 70% → 100% | 0d → none |
| 76 | **Pruebas** |  | 2019-07-09 A | 54% → 100% | 15d → none |
| 88 | **Pruebas de usuario** |  | 2019-07-09 A | 34% → 100% | 15d → none |
| 90 | Acompañar instalación solución aplicativa - ambiente de pruebas de usuario |  | 2019-06-28 A | 50% → 100% | 22d → none |
| 94 | Ejecutar pruebas de usuario de la solución completa | 2019-06-21 A | 2019-06-25 A | 0% → 100% | 0d → none |
| 95 | Acompañar pruebas de usuario y atender hallazgos/defectos en la aplicación |  | 2019-07-09 A | 40% → 100% | 15d → none |
| 96 | Registrar hallazgos / defectos | 2019-06-21 A | 2019-06-25 A | 0% → 100% | 25d → none |
| 97 | Atender incidentes en ambientes | 2019-06-21 A | 2019-06-25 A | 0% → 100% | 0d → none |
| 98 | Validar defectos ajustados | 2019-06-25 A | 2019-06-25 A | 0% → 100% | 0d → none |
| 99 | Elaborar Oficio de Aceptación de Pruebas de Usuario y Liberación | 2019-06-25 A | 2019-06-25 A | 0% → 100% | 0d → none |
| 100 | Oficio de Aceptación de Pruebas de Usuario y Liberación | 2019-06-25 A | 2019-06-25 A | 0% → 100% | 0d → none |
| 101 | Ambientación de estrés y producción | 2019-06-25 A | 2019-06-25 A | 0% → 100% | 25d → none |
| 102 | Seguridad identidades estrés y producción | 2019-06-25 A | 2019-06-25 A | 0% → 100% | 25d → none |
| 103 | **Pruebas de vulnerabilidad** | 2019-06-25 A | 2019-06-27 A | 0% → 100% | 0d → none |
| 104 | Ejecutar pruebas de vulnerabilidad | 2019-06-25 A | 2019-06-25 A | 0% → 100% | 0d → none |
| 105 | Informar los hallazgos | 2019-06-25 A | 2019-06-25 A | 0% → 100% | 2d → none |
| 106 | Atender hallazgos | 2019-06-25 A | 2019-06-25 A | 0% → 100% | 2d → none |
| 107 | Certificar la seguridad de información | 2019-06-26 A | 2019-06-27 A | 0% → 100% | 0d → none |
| 108 | Reporte de pruebas de vulnerabilidad | 2019-06-27 A | 2019-06-27 A | 0% → 100% | 0d → none |
| 109 | Certificado de no vulnerabilidades | 2019-06-27 A | 2019-06-27 A | 0% → 100% | 0d → none |
| 110 | **Pruebas de estrés** | 2019-06-25 A | 2019-06-26 A | 0% → 100% | 24.5d → none |
| 111 | Compilar, Armar e Instalar solución aplicativa - ambiente de estrés | 2019-06-26 A | 2019-06-26 A | 0% → 100% | 24.5d → none |
| 112 | Automatizar caso de prueba de estrés | 2019-06-25 A | 2019-06-25 A | 0% → 100% | 25d → none |
| 113 | Ejecutar pruebas de estrés | 2019-06-25 A | 2019-06-25 A | 0% → 100% | 25d → none |
| 114 | Informar los hallazgos | 2019-06-25 A | 2019-06-25 A | 0% → 100% | 25d → none |
| 115 | Atender hallazgos | 2019-06-25 A | 2019-06-25 A | 0% → 100% | 25d → none |
| 116 | Formalizar informe de pruebas de estrés | 2019-06-25 A | 2019-06-25 A | 0% → 100% | 25d → none |
| 117 | Reporte de pruebas de estrés | 2019-06-25 A | 2019-06-25 A | 0% → 100% | 25d → none |
| 118 | Informe de pruebas de estrés | 2019-06-25 A | 2019-06-25 A | 0% → 100% | 25d → none |
| 119 | **Acompañamiento a la implementación** | 2019-06-28 A | 2019-07-22 A | 0% → 100% | 0d → none |
| 120 | Realizar toma aplicativa | 2019-06-28 A | 2019-06-28 A | 0% → 100% | 0d → none |
| 121 | Capacitar a Mesa de servicio (CDS) | 2019-06-28 A | 2019-06-28 A | 0% → 100% | 22d → none |
| 122 | Capacitar a Mesa de servicio (RAPE) | 2019-06-28 A | 2019-06-28 A | 0% → 100% | 22d → none |
| 123 | Instalar solución aplicativa - ambiente de producción | 2019-06-28 A | 2019-07-01 A | 0% → 100% | 0d → none |
| 124 | Acompañar en la implementación solución aplicativa - ambiente de producción | 2019-06-28 A | 2019-07-04 A | 0% → 100% | 18.5d → none |
| 125 | Informar de la puesta en producción | 2019-07-01 A | 2019-07-01 A | 0% → 100% | 0d → none |
| 126 | Dar seguimiento al periodo de estabilización | 2019-07-02 A | 2019-07-22 A | 0% → 100% | 0d → none |
| 127 | Aplicación instalada en ambiente de producción | 2019-07-01 A | 2019-07-01 A | 0% → 100% | 21.5d → none |
| 128 | **Cierre** | 2019-07-23 A | 2019-07-30 A | 0% → 100% | 0d → none |
| 129 | Cerrar proyecto | 2019-07-23 A | 2019-07-30 A | 0% → 100% | 0d → none |
| 130 | Proyecto cerrado | 2019-07-30 A | 2019-07-30 A | 0% → 100% | 0d → none |
